# Code Milestones

Schedule from MS Project, 2000-10-16 to 2001-10-04.
Climax

## Calendars

- Standard: Mon-Fri 08:00-12:00, 13:00-17:00; Sat-Sun off.

## Resources

| Resource |
| --- |
| Dave Owens |
| Charles Blair |
| Paul Grenfell |
| Art |
| Design |

## Schedule

| ID | WBS | Task | Type | Duration | Start | Finish | Total slack | Deadline | Resources | Work |
| --- | --- | --- | --- | --- | --- | --- | --- | --- | --- | --- |
| 2 | 1 | Milestone 1 | milestone | 0d | 2000-10-16 | 2000-10-16 | 254d |  |  |  |
| 4 | 2 | Milestone 2 - 16/10/00 | milestone | 0d | 2000-10-16 | 2000-10-16 | 1d | 2000-10-16 |  |  |
| 6 | 3 | **Milestone 3 - 13/11/00** |  | 21d | 2000-10-16 | 2000-11-13 | 0d | 2000-11-13 |  | 488h |
| 7 | 3.1 | **Dave Owens** |  | 21d | 2000-10-16 | 2000-11-13 | 0d |  |  | 168h |
| 8 | 3.1.1 | **Map Editor** |  | 21d | 2000-10-16 | 2000-11-13 | 0d |  |  | 168h |
| 9 | 3.1.1.1 | Core Functionality |  | 3d | 2000-10-16 | 2000-10-18 | 18d |  | Dave Owens | 24h |
| 10 | 3.1.1.2 | **Layers** |  | 4d | 2000-10-19 | 2000-10-24 | 14d |  |  | 32h |
| 11 | 3.1.1.2.1 | **Gfx Layers** |  | 4d | 2000-10-19 | 2000-10-24 | 14d |  |  | 32h |
| 12 | 3.1.1.2.1.1 | Background Layer |  | 1d | 2000-10-19 | 2000-10-19 | 17d |  | Dave Owens | 8h |
| 13 | 3.1.1.2.1.2 | Mid Layer |  | 1d | 2000-10-20 | 2000-10-20 | 16d |  | Dave Owens | 8h |
| 14 | 3.1.1.2.1.3 | Action Layer |  | 1d | 2000-10-23 | 2000-10-23 | 15d |  | Dave Owens | 8h |
| 15 | 3.1.1.2.1.4 | Fore Layer |  | 1d | 2000-10-24 | 2000-10-24 | 14d |  | Dave Owens | 8h |
| 16 | 3.1.1.3 | **Tile Bank** |  | 4d | 2000-10-25 | 2000-10-30 | 10d |  |  | 32h |
| 17 | 3.1.1.3.1 | **Tile Set** |  | 4d | 2000-10-25 | 2000-10-30 | 10d |  |  | 32h |
| 18 | 3.1.1.3.1.1 | Core |  | 3d | 2000-10-25 | 2000-10-27 | 11d |  | Dave Owens | 24h |
| 19 | 3.1.1.3.1.2 | GUI |  | 1d | 2000-10-30 | 2000-10-30 | 10d |  | Dave Owens | 8h |
| 20 | 3.1.1.4 | **Map Data** |  | 1d | 2000-10-31 | 2000-10-31 | 9d |  |  | 8h |
| 21 | 3.1.1.4.1 | Core |  | 1d | 2000-10-31 | 2000-10-31 | 9d |  | Dave Owens | 8h |
| 22 | 3.1.1.5 | **Project** |  | 2d | 2000-11-01 | 2000-11-02 | 7d |  |  | 16h |
| 23 | 3.1.1.5.1 | Load Project |  | 1d | 2000-11-01 | 2000-11-01 | 8d |  | Dave Owens | 8h |
| 24 | 3.1.1.5.2 | Save Project |  | 1d | 2000-11-02 | 2000-11-02 | 7d |  | Dave Owens | 8h |
| 25 | 3.1.1.6 | **Output** |  | 5d | 2000-11-03 | 2000-11-09 | 2d |  |  | 40h |
| 26 | 3.1.1.6.1 | **PSX Data** |  | 3d | 2000-11-03 | 2000-11-07 | 4d |  |  | 24h |
| 27 | 3.1.1.6.1.1 | **Map Data** |  | 1d | 2000-11-03 | 2000-11-03 | 6d |  |  | 8h |
| 28 | 3.1.1.6.1.1.1 | Level Data |  | 1d | 2000-11-03 | 2000-11-03 | 6d |  | Dave Owens | 8h |

Notes:
- 9: Ability to view and edit multiple maps. / Shared Layer Palette Window / ·Currently active maps layer data / ·Active Layer Selection / ·Hide/Show toggle / Shared Tile Browser Window / ·Currently active maps tile sets data / ·Drop Box to select tile set / 2d/3d Toggle / ·GUI toggle to set render for 2d (GBA) or 3d (PSX) / Grid overlay / ·Ability to show a tile grid over the maps, to aid in tile placement / ·Possibly the ability to choose the colour of the grid, in case of colour similarity from tiles to grid / View Orientation / ·Ability to alter the view angle of the 'camera' respective to platform view
- 10: Levels are built from multiple layers / Each 'module' of a level, has its own layer
- 11: Layers that are only graphical
- 12: Solid Tile layer / ·32x32 (AGB defined) / ·2d Render (AGB & PSX) / ·Show/Hide
- 13: Mid Tile layer / ·32x32 (AGB defined) / ·2d Render (AGB & PSX) / ·Show/Hide / ·
- 14: Action Tile layer / ·Unlimited size / ·2d Render (AGB) / ·3d Render (PSX) / ·Show/Hide / ·
- 15: Foreground layer, in front of Action layer and player / ·Unlimited size / ·2d Render (AGB & PSX) / ·Show/Hide
- 16: A work bank of separate tile sets.
- 17: Tileset is a set of tiles, loaded from one MAX Exported file. / To keep data consistent with the max exported files, these are not going to be saved, simply reloaded from the max export each time they are needed
- 18: Load Tileset / ·Load Tiles from Max Export / ·Process Tiles into internal format / Load Textures / ·Texture list taken from Max Export / ·Textures loaded into internal format / ·Possible use of ParkGrab or internal version / Create 3d Blocks / ·Transfer tiles into internal 3d format / Create 2d Tiles / ·Create 2d 'pre-render' of tile, from 3d data and texture / ·Render based on camera view angle / Update TileSets / ·Reload 'changed' TileSets (so tile can be updated outside max)
- 19: GUI / ·Separate Tile Browser Window / ·TileSets Selector (Drop-Box..) / ·Display Tile set for picking / ·LMB Tile picking / ·RMB Tile picking
- 21: Main Map Storage / ·Resizable / ·Save Map Data to Map Editor Format
- 22: An Ini style file, which contains all file and settings information to reload a previous work session / ·Contains paths to data, no map/tile data to be held within / ·All paths relative to the project path / Project Settings / ·Active Layer / ·Current Layer Settings / ·All GUI settings
- 23: Reload previous 'work state' / ·Load project settings / ·Load Map data / ·Load Tilebank (TileSets) from relative paths
- 24: Save current 'work state' / ·Save project settings / ·Save Map data / ·Save Tilebank (TileSets) relative paths
- 25: Output end platform data. / This data ideally will be as close to the final platform format as possible. / i.e. Once loaded, only absolute pointers need to be fixed up (if any)
- 26: PSX Format / Raw data. / Data is one continuous block, with headers and sub-headers setting data layout
- 28: Layer 'Map' data level. / One block of data per gfx layer / ·Background / ·Mid / ·Action / ·Foreground / Generic Layer Header (one per layer) / ·Width / ·Height

| ID | WBS | Task | Duration | Start | Finish | Total slack | Resources | Work |
| --- | --- | --- | --- | --- | --- | --- | --- | --- |
| 29 | 3.1.1.6.1.2 | **Tile Data** | 2d | 2000-11-06 | 2000-11-07 | 4d |  | 16h |
| 30 | 3.1.1.6.1.2.1 | Tile Blocks | 1d | 2000-11-06 | 2000-11-06 | 5d | Dave Owens | 8h |
| 31 | 3.1.1.6.1.2.2 | Textures | 1d | 2000-11-07 | 2000-11-07 | 4d | Dave Owens | 8h |
| 32 | 3.1.1.6.2 | **AGB Data** | 2d | 2000-11-08 | 2000-11-09 | 2d |  | 16h |
| 33 | 3.1.1.6.2.1 | **Map Data** | 1d | 2000-11-08 | 2000-11-08 | 3d |  | 8h |
| 34 | 3.1.1.6.2.1.1 | Level Data | 1d | 2000-11-08 | 2000-11-08 | 3d | Dave Owens | 8h |
| 35 | 3.1.1.6.2.2 | **Tile Data** | 1d | 2000-11-09 | 2000-11-09 | 2d |  | 8h |
| 36 | 3.1.1.6.2.2.1 | Textures | 1d | 2000-11-09 | 2000-11-09 | 2d | Dave Owens | 8h |
| 37 | 3.1.1.7 | **Edit Functions** | 2d | 2000-11-10 | 2000-11-13 | 0d |  | 16h |
| 38 | 3.1.1.7.1 | Paint | 1d | 2000-11-10 | 2000-11-10 | 1d | Dave Owens | 8h |
| 39 | 3.1.1.7.2 | Tile Mirror | 1d | 2000-11-13 | 2000-11-13 | 0d | Dave Owens | 8h |
| 40 | 3.2 | **Charles Balir** | 20d | 2000-10-16 | 2000-11-10 | 1d |  | 160h |
| 41 | 3.2.1 | Initial AI designs | 20d | 2000-10-16 | 2000-11-10 | 1d | Charles Blair | 160h |
| 42 | 3.3 | **Paul Grenfel** | 20d | 2000-10-16 | 2000-11-10 | 1d |  | 160h |
| 43 | 3.3.1 | **System Code** | 13d | 2000-10-16 | 2000-11-01 | 8d |  | 104h |
| 44 | 3.3.1.1 | Generic Pad Handler | 1d | 2000-10-16 | 2000-10-16 | 20d | Paul Grenfell | 8h |
| 45 | 3.3.1.2 | Memory Management | 2d | 2000-10-17 | 2000-10-18 | 18d | Paul Grenfell | 16h |
| 46 | 3.3.1.3 | File Handler | 2d | 2000-10-19 | 2000-10-20 | 16d | Paul Grenfell | 16h |
| 47 | 3.3.1.4 | Error Handler | 2d | 2000-10-23 | 2000-10-24 | 14d | Paul Grenfell | 16h |
| 48 | 3.3.1.5 | Sprite Engine | 2d | 2000-10-25 | 2000-10-26 | 12d | Paul Grenfell | 16h |
| 49 | 3.3.1.6 | Scene Handler | 2d | 2000-10-27 | 2000-10-30 | 10d | Paul Grenfell | 16h |
| 50 | 3.3.1.7 | Localisation Database | 2d | 2000-10-31 | 2000-11-01 | 8d | Paul Grenfell | 16h |
| 51 | 3.3.2 | **Audio** | 7d | 2000-11-02 | 2000-11-10 | 1d |  | 56h |
| 52 | 3.3.2.1 | PSX Audio Driver | 3d | 2000-11-02 | 2000-11-06 | 5d | Paul Grenfell | 24h |
| 53 | 3.3.2.2 | Music | 2d | 2000-11-07 | 2000-11-08 | 3d | Paul Grenfell | 16h |
| 54 | 3.3.2.3 | Samples | 2d | 2000-11-09 | 2000-11-10 | 1d | Paul Grenfell | 16h |

Notes:
- 30: PSX format 3d/2d tile blocks. / There needs to be some form of 'sharing' of connecting points between blocks, to reduce tearing. / Header / Block Count / Block Header / ·Poly Count / ·Vtx Count / Block Data / ·Poly Data / ·Vtx Data / ·Shared Point Info
- 31: PSX textures / All textures will be output in TPage format. / Either spawn into ParkGrab, or internally created
- 32: PSX Format / Pref Raw data, but Adrian has mentioned source code (AKK!) / Data is one continuous block, with headers and sub-headers setting data layout
- 34: Layer 'Map' data level. / One block of data per gfx layer / ·Background / ·Mid / ·Action / ·Foreground / Generic Layer Header (one per layer) / ·Width / ·Height
- 36: AGB Textures / The AGB will use pre-rendered tiles. / This data will come from the 2d tile data, created on TileSets load up, with some processing / Each gfx layer / ·Build list of USED tiles / ·Create a shared 256 colour palette for the used tiles. / ·Output 256 colour tiles, in AGB format. / ·Output shared palette, in AGB format.
- 37: Functions to edit the map data
- 38: Place a tile down. (Paint) / Tile placed is dependant on the mouse button used. / ·LMB Paint / ·RMB Paint
- 39: Ability to mirror tile in X or Y axis (based on 2d tile principle) / GUI / ·X Mirror / ·Y Mirror / ·GUI needs to correspond with selected tiles mirror params
- 44: Reading and translation on pad data / Analogue will not need to be supported / ·Read Pad Port Data / ·Translate into game pad data based on pad Config / ·
- 45: Memory allocation, de-allocation / ·Memory alloc / ·Memory De-Alloc / ·Memory Defragmentation / ·Memory Leak trapping / ·Memory Debugging functions
- 46: PC/CD loading routines / ·Load files to target / ·Streaming of data / ·Caching of Data
- 47: Handling of all errors / ·Debug messages / ·Assert Messages / ·Exception handler
- 48: ·Handle frames from VRAM / ·Rotation / ·Mirroring / ·Scaling / ·Transparency - Fake Alpha? / ·Componenting?
- 49: Handle the scene traversal of the game. / ·Init scene / ·Dump Scene / ·Auto-dump current scene, on new scene being added? / ·Scene Debugging (memory remnants/Diff)
- 50: All translation text components / ·DB loading / ·text retrieval from DB / ·Printing of text / ·Handling of printed text / ·Text to speech hooks / Excel sheet to target database tools
- 52: Utilise the PSX Mod player libraries for all sample and music playing. / All Data supplied as packed track data, and VAB banks.
- 53: Music is played as a standard tracker module / ·Load / ·Play / ·Pause / ·Stop / ·Fade In / ·Fade Out / ·Dump / ·Volume Setting / ·
- 54: Samples are played as either normal samples, or sequences of samples, defined by tracker data. / ·Load Sample Data (VAB Bank) / ·Load Sequence Data (Packed tracker module) / ·Play Sample, returns ID for external control / ·Play Sequence, returns ID for external control / ·Play Priorities / ·Pause/Resume (takes ID) / ·Stop (Takes ID) / ·Loop (Prob an attrib passed on play) / ·Reverb (Prob an attrib passed on play) / ·Dump Sample Data / ·Dump Sequence Data / ·Generic Sample Volume Setting

| ID | WBS | Task | Duration | Start | Finish | Total slack | Deadline | Resources | Work |
| --- | --- | --- | --- | --- | --- | --- | --- | --- | --- |
| 56 | 4 | **Milestone 4 - 11/12/00** | 22d | 2000-11-13 | 2000-12-12 | 0d | 2000-12-12 |  | 504h |
| 57 | 4.1 | **Dave Owens** | 21d | 2000-11-14 | 2000-12-12 | 0d |  |  | 168h |
| 58 | 4.1.1 | **Map Editor** | 15d | 2000-11-14 | 2000-12-04 | 6d |  |  | 120h |
| 59 | 4.1.1.1 | **Layers** | 5d | 2000-11-14 | 2000-11-20 | 16d |  |  | 40h |
| 60 | 4.1.1.1.1 | **Data Layers** | 5d | 2000-11-14 | 2000-11-20 | 16d |  |  | 40h |
| 61 | 4.1.1.1.1.1 | Collision Layer | 5d | 2000-11-14 | 2000-11-20 | 16d |  | Dave Owens | 40h |
| 62 | 4.1.1.2 | **Output** | 2d | 2000-11-21 | 2000-11-22 | 14d |  |  | 16h |
| 63 | 4.1.1.2.1 | **PSX Data** | 1d | 2000-11-21 | 2000-11-21 | 15d |  |  | 8h |
| 64 | 4.1.1.2.1.1 | **Map Data** | 1d | 2000-11-21 | 2000-11-21 | 15d |  |  | 8h |
| 65 | 4.1.1.2.1.1.1 | Collision Data | 1d | 2000-11-21 | 2000-11-21 | 15d |  | Dave Owens | 8h |
| 66 | 4.1.1.2.2 | **AGB Data** | 1d | 2000-11-22 | 2000-11-22 | 14d |  |  | 8h |
| 67 | 4.1.1.2.2.1 | **Map Data** | 1d | 2000-11-22 | 2000-11-22 | 14d |  |  | 8h |
| 68 | 4.1.1.2.2.1.1 | Collision Data | 1d | 2000-11-22 | 2000-11-22 | 14d |  | Dave Owens | 8h |
| 69 | 4.1.1.3 | **Edit Functions** | 8d | 2000-11-23 | 2000-12-04 | 6d |  |  | 64h |
| 70 | 4.1.1.3.1 | Bounding Box Selection | 2d | 2000-11-23 | 2000-11-24 | 12d |  | Dave Owens | 16h |
| 71 | 4.1.1.3.2 | Copy/Cut | 2d | 2000-11-27 | 2000-11-28 | 10d |  | Dave Owens | 16h |
| 72 | 4.1.1.3.3 | Paste | 2d | 2000-11-29 | 2000-11-30 | 8d |  | Dave Owens | 16h |
| 73 | 4.1.1.3.4 | Eye Dropper | 2d | 2000-12-01 | 2000-12-04 | 6d |  | Dave Owens | 16h |
| 74 | 4.1.2 | **Level** | 6d | 2000-12-05 | 2000-12-12 | 0d |  |  | 48h |
| 75 | 4.1.2.1 | **Layers** | 6d | 2000-12-05 | 2000-12-12 | 0d |  |  | 48h |
| 76 | 4.1.2.1.1 | Background Layer | 1d | 2000-12-05 | 2000-12-05 | 5d |  | Dave Owens | 8h |
| 77 | 4.1.2.1.2 | Mid Layer | 1d | 2000-12-06 | 2000-12-06 | 4d |  | Dave Owens | 8h |
| 78 | 4.1.2.1.3 | Action Layer | 2d | 2000-12-07 | 2000-12-08 | 2d |  | Dave Owens | 16h |
| 79 | 4.1.2.1.4 | Fore Layer | 1d | 2000-12-11 | 2000-12-11 | 1d |  | Dave Owens | 8h |

Notes:
- 59: Levels are built from multiple layers / Each 'module' of a level, has its own layer
- 60: Layers that are non graphical. / Essentially, control data for the in-game elements
- 61: Layer for Collision Map / ·Uses Special Collision Tile Sets / ·2d render / More detail to be defined after meetings with AGB and PSX programmers
- 62: Output end platform data. / This data ideally will be as close to the final platform format as possible. / i.e. Once loaded, only absolute pointers need to be fixed up (if any)
- 63: PSX Format / Raw data. / Data is one continuous block, with headers and sub-headers setting data layout
- 65: Collision data for the action layer / Header / ·Width (should be same as Action Layer) / ·Height (should be same as Action Layer) / Data / ·Collision 'maps' for each tile (to be decided)
- 66: PSX Format / Pref Raw data, but Adrian has mentioned source code (AKK!) / Data is one continuous block, with headers and sub-headers setting data layout
- 68: Collision data for the action layer / Header / ·Width (should be same as Action Layer) / ·Height (should be same as Action Layer) / Data / ·Collision 'maps' for each tile (to be decided)
- 69: Functions to edit the map data
- 70: Bounding Box selection, primarily for copy and paste functions / Create BBox / ·LMB Down - Start BBox Selection / ·LMB Drag - change Selection size / ·LMB Up - End BBox Selection / Resize BBox / ·LMB Down on BBox Edge - Start Resize (Based on selected edge) / ·LMB Drag - move Edge / ·LMB Up- End BBox Resize / ·Cursor=Resize cursor / Move BBox / ·LMB Down in BBox - Start Move / ·LMB Drag - move BBox / ·LMB Up- End BBox Move / ·Cursor=Move cursor / Misc Functions / ·Select None - Clears BBox / ·Select All - Selects Whole Map / Render BBox - To be decided... / ·Wireframe box/cube / ·Tile Frame Box/Cube / ·Shaded area / GUI Needed / ·Create BBox / ·Resize BBox / ·Move BBox / ·Select None / ·Select All
- 71: Generic buffer to copy tile data to, to allow pasting into active map, and possibly any map. / Buffer / ·Resizable generic copy buffer / GUI / ·Copy / ·Cut - copies selection, then sets selection to RMB tile, or 0
- 72: Paste Copy buffer / Paste / ·Create floating BBox / ·Copy buffer data into BBox / ·Move BBox / ·Confirm placement / ·Cancel Placement
- 73: This function is much the same as the eye dropper in art packages. / Essentially it will pick up the tile clicked on, and assign that tile to the mouse button that clicked / GUI / ·Button (Tool Bar) / ·Keyboard Mapping / Functionality / ·Read tile data and assign to clicked button
- 76: Background (solid) Tile layer / Control / ·Proportional Parallax positioning, relative to the Mid Layer / Render / ·2d Render (AGB & PSX)
- 77: Mid Tile layer / Control / ·Proportional Parallax positioning, relative to the Action Layer / Render / ·2d Render (AGB & PSX)
- 78: Action Tile layer - The layer that the game is based on / Control / ·Proportional positioning, relative to the Player/Camera / Render / ·2d Render (AGB) / ·3d Render (PSX)
- 79: Foreground layer, in front of Action layer and player / Control / ·Proportional parallax positioning, relative to the Action Layer / Render / ·2d Render (AGB & PSX)

| ID | WBS | Task | Duration | Start | Finish | Total slack | Deadline | Resources | Work |
| --- | --- | --- | --- | --- | --- | --- | --- | --- | --- |
| 80 | 4.1.2.1.5 | **Switches/Triggers** | 1d | 2000-12-12 | 2000-12-12 | 0d |  |  | 8h |
| 81 | 4.1.2.1.5.1 | Types | 1d | 2000-12-12 | 2000-12-12 | 0d |  | Dave Owens | 8h |
| 82 | 4.2 | **Charles Balir** | 20d | 2000-11-13 | 2000-12-08 | 2d |  |  | 160h |
| 83 | 4.2.1 | Final AI designs | 20d | 2000-11-13 | 2000-12-08 | 2d |  | Charles Blair | 160h |
| 84 | 4.3 | **Paul Grenfel** | 22d | 2000-11-13 | 2000-12-12 | 0d |  |  | 176h |
| 85 | 4.3.1 | **GUI Handler** | 22d | 2000-11-13 | 2000-12-12 | 0d |  |  | 176h |
| 86 | 4.3.1.1 | **GUI Components (Generic)** | 18d | 2000-11-13 | 2000-12-06 | 4d |  |  | 144h |
| 87 | 4.3.1.1.1 | Parent Frame | 2d | 2000-11-13 | 2000-11-14 | 20d |  | Paul Grenfell | 16h |
| 88 | 4.3.1.1.2 | Child Frame | 2d | 2000-11-15 | 2000-11-16 | 18d |  | Paul Grenfell | 16h |
| 89 | 4.3.1.1.3 | Textbox | 2d | 2000-11-17 | 2000-11-20 | 16d |  | Paul Grenfell | 16h |
| 90 | 4.3.1.1.4 | EditBox | 2d | 2000-11-21 | 2000-11-22 | 14d |  | Paul Grenfell | 16h |
| 91 | 4.3.1.1.5 | Buttons | 2d | 2000-11-23 | 2000-11-24 | 12d |  | Paul Grenfell | 16h |
| 92 | 4.3.1.1.6 | Bitmap | 2d | 2000-11-27 | 2000-11-28 | 10d |  | Paul Grenfell | 16h |
| 93 | 4.3.1.1.7 | Vertical Scroll Bar | 2d | 2000-11-29 | 2000-11-30 | 8d |  | Paul Grenfell | 16h |
| 94 | 4.3.1.1.8 | Horizontal Scroll Bar | 2d | 2000-12-01 | 2000-12-04 | 6d |  | Paul Grenfell | 16h |
| 95 | 4.3.1.1.9 | Spinner | 2d | 2000-12-05 | 2000-12-06 | 4d |  | Paul Grenfell | 16h |
| 96 | 4.3.1.2 | **Special Effects** | 4d | 2000-12-07 | 2000-12-12 | 0d |  |  | 32h |
| 97 | 4.3.1.2.1 | **Particles** | 2d | 2000-12-07 | 2000-12-08 | 2d |  |  | 16h |
| 98 | 4.3.1.2.1.1 | Bubbles | 2d | 2000-12-07 | 2000-12-08 | 2d |  | Paul Grenfell | 16h |
| 99 | 4.3.1.2.2 | **Other Effects** | 2d | 2000-12-11 | 2000-12-12 | 0d |  |  | 16h |
| 100 | 4.3.1.2.2.1 | Bubble Fade | 2d | 2000-12-11 | 2000-12-12 | 0d |  | Paul Grenfell | 16h |
| 102 | 5 | **Milestone 5 - 15/01/01** | 25d | 2000-12-11 | 2001-01-12 | 1d | 2001-01-15 |  | 568h |
| 103 | 5.1 | **Dave Owens** | 23d | 2000-12-13 | 2001-01-12 | 1d |  |  | 184h |
| 104 | 5.1.1 | **Player Character** | 23d | 2000-12-13 | 2001-01-12 | 1d |  |  | 184h |
| 105 | 5.1.1.1 | **Control** | 5d | 2000-12-13 | 2000-12-19 | 19d |  |  | 40h |
| 106 | 5.1.1.1.1 | **States** | 5d | 2000-12-13 | 2000-12-19 | 19d |  |  | 40h |
| 107 | 5.1.1.1.1.1 | **Normal States** | 5d | 2000-12-13 | 2000-12-19 | 19d |  |  | 40h |
| 108 | 5.1.1.1.1.1.1 | Idle | 1d | 2000-12-13 | 2000-12-13 | 23d |  | Dave Owens | 8h |
| 109 | 5.1.1.1.1.1.2 | Run | 1d | 2000-12-14 | 2000-12-14 | 22d |  | Dave Owens | 8h |
| 110 | 5.1.1.1.1.1.3 | Jump | 1d | 2000-12-15 | 2000-12-15 | 21d |  | Dave Owens | 8h |
| 111 | 5.1.1.1.1.1.4 | Fall/Land | 1d | 2000-12-18 | 2000-12-18 | 20d |  | Dave Owens | 8h |
| 112 | 5.1.1.1.1.1.5 | Duck | 1d | 2000-12-19 | 2000-12-19 | 19d |  | Dave Owens | 8h |

Notes:
- 80: Unfortunately, to be designed, due to lack of current design on this subject :oP
- 85: GUI Handler is a generic 'global' class that will maintain and control all active GUI elements. / These GUI elements are defined as data, and are built from components.
- 86: Generic Components to be used in other GUI elements. / To retain maximum coherency and data flow, these MUST be data derived components
- 87: Control / Render
- 88: Control / Render
- 89: Control / Render
- 90: Control / Render
- 91: Control / Render
- 92: Control / Render
- 93: Linking / Control / Render
- 94: Linking / Control / Render
- 95: Linking / Control / Render
- 97: Generic particle engine, driven by data passed to it
- 98: Control / Render
- 100: Fade In / Control / Render / Fade Out / Control / Render
- 104: Sponge Bob himself
- 107: Normal states that Spongey can be in
- 108: IdleGeneric01 / IdleGeneric02 / IdleGeneric03 / IdleGeneric04 / IdleGeneric05 / IdleGeneric06 / IdleNet / IdleLauncher / IdleCoral / IdleBoots / Wakeup / Float
- 109: RunStart *Pos Not Needed / RunLoop / RunStop *Pos Not Needed / RunTurn
- 110: JumpStart *Pos Not Needed / JumpLoop / JumpEnd *Pos Not Needed / JumpTurn
- 111: FallLoop / HitGround01 / HitGround02 / HitGround03
- 112: DuckDown / DuckLoop / DuckUp

| ID | WBS | Task | Duration | Start | Finish | Total slack | Resources | Work |
| --- | --- | --- | --- | --- | --- | --- | --- | --- |
| 113 | 5.1.1.2 | **Animation** | 18d | 2000-12-20 | 2001-01-12 | 1d |  | 144h |
| 114 | 5.1.1.2.1 | **Bone Animation System** | 3d | 2000-12-20 | 2000-12-22 | 16d |  | 24h |
| 115 | 5.1.1.2.1.1 | Interpolation of Animation | 2d | 2000-12-20 | 2000-12-21 | 17d | Dave Owens | 16h |
| 116 | 5.1.1.2.1.2 | Anim DB | 1d | 2000-12-22 | 2000-12-22 | 16d | Dave Owens | 8h |
| 117 | 5.1.1.2.2 | **Componented animation** | 15d | 2000-12-25 | 2001-01-12 | 1d |  | 120h |
| 118 | 5.1.1.2.2.1 | Head | 5d | 2000-12-25 | 2000-12-29 | 11d | Dave Owens | 40h |
| 119 | 5.1.1.2.2.2 | Body | 2d | 2001-01-01 | 2001-01-02 | 9d | Dave Owens | 16h |
| 120 | 5.1.1.2.2.3 | Arms | 2d | 2001-01-03 | 2001-01-04 | 7d | Dave Owens | 16h |
| 121 | 5.1.1.2.2.4 | Hands | 2d | 2001-01-05 | 2001-01-08 | 5d | Dave Owens | 16h |
| 122 | 5.1.1.2.2.5 | Legs | 2d | 2001-01-09 | 2001-01-10 | 3d | Dave Owens | 16h |
| 123 | 5.1.1.2.2.6 | Feet | 2d | 2001-01-11 | 2001-01-12 | 1d | Dave Owens | 16h |
| 124 | 5.2 | **Charles Balir** | 25d | 2000-12-11 | 2001-01-12 | 1d |  | 200h |
| 125 | 5.2.1 | **NPC** | 25d | 2000-12-11 | 2001-01-12 | 1d |  | 200h |
| 126 | 5.2.1.1 | Patrick Starfish | 2d | 2000-12-11 | 2000-12-12 | 24d | Charles Blair | 16h |
| 127 | 5.2.1.2 | Sandy | 2d | 2000-12-13 | 2000-12-14 | 22d | Charles Blair | 16h |
| 128 | 5.2.1.3 | Mr Krabs | 2d | 2000-12-15 | 2000-12-18 | 20d | Charles Blair | 16h |
| 129 | 5.2.1.4 | Squidward | 2d | 2000-12-19 | 2000-12-20 | 18d | Charles Blair | 16h |
| 130 | 5.2.1.5 | Plankton | 2d | 2000-12-21 | 2000-12-22 | 16d | Charles Blair | 16h |
| 131 | 5.2.1.6 | **World1** | 15d | 2000-12-25 | 2001-01-12 | 1d |  | 120h |
| 132 | 5.2.1.6.1 | Enemies | 10d | 2000-12-25 | 2001-01-05 | 6d | Charles Blair | 80h |
| 133 | 5.2.1.6.2 | Boss | 5d | 2001-01-08 | 2001-01-12 | 1d | Charles Blair | 40h |
| 134 | 5.3 | **Paul Grenfel** | 23d | 2000-12-13 | 2001-01-12 | 1d |  | 184h |
| 135 | 5.3.1 | Back-End | 5d | 2000-12-13 | 2000-12-19 | 19d | Paul Grenfell | 40h |
| 136 | 5.3.2 | **Facial Expressions** | 5d | 2000-12-20 | 2000-12-26 | 14d |  | 40h |
| 137 | 5.3.2.1 | Features | 5d | 2000-12-20 | 2000-12-26 | 14d | Paul Grenfell | 40h |

Notes:
- 113: Player character animation
- 114: Animation based on bone animation. / All data stored as quaternions. / Tests to be carried out on the resolution of the storage. / Key Framed / ·Very small data set / ·Interpolation needed - maths intensive / ·Can cause jerky animation / · / Snap-Show / ·Larger data set / ·No interpolation is needed / ·Easy to maintain and animate / We 'may' implement a dual system, where more used anims are snapshot, to make the animations look, and feel nicer
- 115: Snap-Shot or / Key Framing
- 117: To keep the data flow to an absolute minimum, we are going to utilise a componented animation system. / This involves breaking Spongey into logical sections. / As he has very thin arms, this aids in the split. / Splits will be / ·Head (Large sponge part) / ·Body (Shorts) / ·Arms / ·Hands / ·Legs / ·Feet / One benefit of this system, is that we have the opportunity to only store 'half' of the limb anims, as we can reuse the anim for the opposing side. / This is yet to be looked into
- 118: This will segmented mesh, which is deformed in real-time, to data exported from MAX. / This mesh will have connection points (Dummies) for various parts of his body / ·Arms. / ·Facial features (if taken beyond a simple flat texture) / ·Bolt-ons (Power-Ups) / Control / Render / ·Multi-poly Functionality / ·Texturing / ·Lighting / ·Shading
- 119: This will Predefined mesh. / This mesh will have connection points (Dummies) for various parts of his body / ·Legs. / ·Bolt-ons / Control / Render / ·Multi-poly Functionality / ·Texturing / ·Lighting / ·Shading
- 120: The shoulder joint will take a point on the 'Head' as its parent / The hand joint will act as the parent for the hands / ·Shoulder Joint / ·Elbow Joint / ·Hand Joint / Control / Render / ·3 point Line/Quad render / ·Texturing / ·Lighting / ·Shading
- 121: Hands will be attached to the hand joint of the arms, and take it as its parent. / Additional animation 'is' possible on the hands, but no anticipated / Control / Render / ·Multi-poly Functionality / ·Texturing / ·Lighting / ·Shading
- 122: The Hip joint will take a point on the 'Body as its parent / The foot joint will act as the parent for the feet / ·Hip Joint / ·Knee Joint / ·Foot Joint / Control / Render / ·3 point Line/Quad render / ·Texturing / ·Lighting / ·Shading
- 123: Feet will be attached to the foot joint of the legs, and take it as its parent. / Additional animation 'is' possible on the feet, but no anticipated / Control / Render / ·Multi-poly Functionality / ·Texturing / ·Lighting / ·Shading
- 126: Control / ·AI / ·Communication with player / Render / ·Sprite anim
- 127: Control / ·AI / ·Communication with player / Render / ·Sprite anim
- 128: Control / ·AI / ·Communication with player / Render / ·Sprite anim
- 129: Control / ·AI / ·Communication with player / Render / ·Sprite anim
- 130: Control / ·AI / ·Communication with player / Render / ·Sprite anim
- 132: Detail to be defined / Control / ·AI / Render / Sprite anim
- 133: Detail to be defined / Control / ·AI / Render / Sprite anim
- 135: Game Complete / ·Congratulations sequence / Game Over / ·End of game sequence
- 137: Features available to be animated are / ·Eyebrows / ·Eyes / ·Nose / ·Mouth / The data will be animation frames stored in main memory. / Control / ·'Tweening' between frames / Render / ·The render will be an upload of individual textures to VRAM. / ·The location of this upload will overwrite a default placement of a texture allocated to the facial feature

| ID | WBS | Task | Duration | Start | Finish | Total slack | Deadline | Resources | Work |
| --- | --- | --- | --- | --- | --- | --- | --- | --- | --- |
| 138 | 5.3.3 | **Communication** | 11d | 2000-12-27 | 2001-01-10 | 3d |  |  | 88h |
| 139 | 5.3.3.1 | Script system | 5d | 2000-12-27 | 2001-01-02 | 9d |  | Paul Grenfell | 40h |
| 140 | 5.3.3.2 | Text to speech hooks | 2d | 2001-01-03 | 2001-01-04 | 7d |  | Paul Grenfell | 16h |
| 141 | 5.3.3.3 | Question / response | 2d | 2001-01-05 | 2001-01-08 | 5d |  | Paul Grenfell | 16h |
| 142 | 5.3.3.4 | Give item | 2d | 2001-01-09 | 2001-01-10 | 3d |  | Paul Grenfell | 16h |
| 143 | 5.3.4 | **Audio** | 2d | 2001-01-11 | 2001-01-12 | 1d |  |  | 16h |
| 144 | 5.3.4.1 | Speech | 2d | 2001-01-11 | 2001-01-12 | 1d |  | Paul Grenfell | 16h |
| 146 | 6 | **Milestone 6 - 12/02/01** | 21d | 2001-01-15 | 2001-02-12 | 0d | 2001-02-12 |  | 488h |
| 147 | 6.1 | **Dave Owens** | 21d | 2001-01-15 | 2001-02-12 | 0d |  |  | 168h |
| 148 | 6.1.1 | **Map Editor - NPC** | 7d | 2001-01-15 | 2001-01-23 | 14d |  |  | 56h |
| 149 | 6.1.1.1 | **Layers** | 5d | 2001-01-15 | 2001-01-19 | 16d |  |  | 40h |
| 150 | 6.1.1.1.1 | **Data Layers** | 5d | 2001-01-15 | 2001-01-19 | 16d |  |  | 40h |
| 151 | 6.1.1.1.1.1 | NPC Layer | 5d | 2001-01-15 | 2001-01-19 | 16d |  | Dave Owens | 40h |
| 152 | 6.1.1.2 | **Output** | 2d | 2001-01-22 | 2001-01-23 | 14d |  |  | 16h |
| 153 | 6.1.1.2.1 | **PSX Data** | 1d | 2001-01-22 | 2001-01-22 | 15d |  |  | 8h |
| 154 | 6.1.1.2.1.1 | **Map Data** | 1d | 2001-01-22 | 2001-01-22 | 15d |  |  | 8h |
| 155 | 6.1.1.2.1.1.1 | NPC Data | 1d | 2001-01-22 | 2001-01-22 | 15d |  | Dave Owens | 8h |
| 156 | 6.1.1.2.2 | **AGB Data** | 1d | 2001-01-23 | 2001-01-23 | 14d |  |  | 8h |
| 157 | 6.1.1.2.2.1 | **Map Data** | 1d | 2001-01-23 | 2001-01-23 | 14d |  |  | 8h |
| 158 | 6.1.1.2.2.1.1 | NPC Data | 1d | 2001-01-23 | 2001-01-23 | 14d |  | Dave Owens | 8h |
| 159 | 6.1.2 | **Normal States** | 6d | 2001-01-24 | 2001-01-31 | 8d |  |  | 48h |
| 160 | 6.1.2.1 | Walk | 2d | 2001-01-24 | 2001-01-25 | 12d |  | Dave Owens | 16h |
| 161 | 6.1.2.2 | Teeter | 2d | 2001-01-26 | 2001-01-29 | 10d |  | Dave Owens | 16h |
| 162 | 6.1.2.3 | Misc | 2d | 2001-01-30 | 2001-01-31 | 8d |  | Dave Owens | 16h |

Notes:
- 139: An external util, that allows scripts to be created. / A script will basically be a sequence of text ID's, and corresponding char to attach text to
- 140: This is a system for PSX / When text is retrieved from the text DB, there is some form of extra data, that tells the code to play some speech corresponding to that text. / With this, we can use the same data, for both platforms, but introduce speech on the PSX in a simple but useful form
- 141: The raw conversation between Spongey and the NPC
- 142: When an NPC gives an item to Spongey, based on the conversation they are having
- 144: All speech is to be streamed from CD / Streaming code / ·Play Queue / ·Priorities / ·Play / ·Pause/Resume / ·Stop / ·Volume Setting
- 149: Levels are built from multiple layers / Each 'module' of a level, has its own layer
- 150: Layers that are non graphical. / Essentially, control data for the in-game elements
- 151: Layer for placement of enemies / ·GUI for setting params (To be defined) / · / More detail to be defined after meetings with AGB and PSX programmers
- 152: Output end platform data. / This data ideally will be as close to the final platform format as possible. / i.e. Once loaded, only absolute pointers need to be fixed up (if any)
- 153: PSX Format / Raw data. / Data is one continuous block, with headers and sub-headers setting data layout
- 155: NPC data / Header / ·NPC count / NPC Data (To be defined) / ·X / ·Y / ·Type / ·State / ....
- 156: PSX Format / Pref Raw data, but Adrian has mentioned source code (AKK!) / Data is one continuous block, with headers and sub-headers setting data layout
- 158: NPC data / Header / ·NPC count / NPC Data (To be defined) / ·X / ·Y / ·Type / ·State / ....
- 159: Normal states that Spongey can be in
- 160: Walking is used JUST for the coral Blower, cos its heavy. / No jumping is possible / Walk Start - Pos not needed / Walk Loop / Walk Stop - Pos not needed / Walk Turn
- 161: For when stood right on edge / TeeterFront / TeeterBack
- 162: Hover / Rebound *Pos Use Jump Frames / KnockBack *Pos Use Jump Frames / Knockforward *Pos Use Jump Frames

| ID | WBS | Task | Duration | Start | Finish | Total slack | Deadline | Resources | Work |
| --- | --- | --- | --- | --- | --- | --- | --- | --- | --- |
| 163 | 6.1.3 | **Power-Up States** | 8d | 2001-02-01 | 2001-02-12 | 0d |  |  | 64h |
| 164 | 6.1.3.1 | Butt Bounce | 2d | 2001-02-01 | 2001-02-02 | 6d |  | Dave Owens | 16h |
| 165 | 6.1.3.2 | Karate Chop | 2d | 2001-02-05 | 2001-02-06 | 4d |  | Dave Owens | 16h |
| 166 | 6.1.3.3 | Net | 2d | 2001-02-07 | 2001-02-08 | 2d |  | Dave Owens | 16h |
| 167 | 6.1.3.4 | Launcher | 2d | 2001-02-09 | 2001-02-12 | 0d |  | Dave Owens | 16h |
| 168 | 6.2 | **Charles Balir** | 20d | 2001-01-15 | 2001-02-09 | 1d |  |  | 160h |
| 169 | 6.2.1 | **NPC** | 20d | 2001-01-15 | 2001-02-09 | 1d |  |  | 160h |
| 170 | 6.2.1.1 | Gary | 5d | 2001-01-15 | 2001-01-19 | 16d |  | Charles Blair | 40h |
| 171 | 6.2.1.2 | **World2** | 15d | 2001-01-22 | 2001-02-09 | 1d |  |  | 120h |
| 172 | 6.2.1.2.1 | Enemies | 10d | 2001-01-22 | 2001-02-02 | 6d |  | Charles Blair | 80h |
| 173 | 6.2.1.2.2 | Boss | 5d | 2001-02-05 | 2001-02-09 | 1d |  | Charles Blair | 40h |
| 174 | 6.3 | **Paul Grenfel** | 20d | 2001-01-15 | 2001-02-09 | 1d |  |  | 160h |
| 175 | 6.3.1 | **Memcard** | 20d | 2001-01-15 | 2001-02-09 | 1d |  |  | 160h |
| 176 | 6.3.1.1 | Load | 10d | 2001-01-15 | 2001-01-26 | 11d |  | Paul Grenfell | 80h |
| 177 | 6.3.1.2 | Save | 10d | 2001-01-29 | 2001-02-09 | 1d |  | Paul Grenfell | 80h |
| 179 | 7 | **Milestone 7 - 12/03/01** | 21d | 2001-02-12 | 2001-03-12 | 0d | 2001-03-12 |  | 488h |
| 180 | 7.1 | **Dave Owens** | 20d | 2001-02-13 | 2001-03-12 | 0d |  |  | 160h |
| 181 | 7.1.1 | **Map Editor - Platforms/Items** | 6d | 2001-02-13 | 2001-02-20 | 14d |  |  | 48h |
| 182 | 7.1.1.1 | **Layers** | 4d | 2001-02-13 | 2001-02-16 | 16d |  |  | 32h |
| 183 | 7.1.1.1.1 | **Data Layers** | 4d | 2001-02-13 | 2001-02-16 | 16d |  |  | 32h |
| 184 | 7.1.1.1.1.1 | Platform Layer | 2d | 2001-02-13 | 2001-02-14 | 18d |  | Dave Owens | 16h |
| 185 | 7.1.1.1.1.2 | Item Layer | 2d | 2001-02-15 | 2001-02-16 | 16d |  | Dave Owens | 16h |
| 186 | 7.1.1.2 | **Output** | 2d | 2001-02-19 | 2001-02-20 | 14d |  |  | 16h |
| 187 | 7.1.1.2.1 | **PSX Data** | 1d | 2001-02-19 | 2001-02-19 | 15d |  |  | 8h |
| 188 | 7.1.1.2.1.1 | **Map Data** | 1d | 2001-02-19 | 2001-02-19 | 15d |  |  | 8h |
| 189 | 7.1.1.2.1.1.1 | Platform Data/Item Data | 1d | 2001-02-19 | 2001-02-19 | 15d |  | Dave Owens | 8h |

Notes:
- 163: These are the various power-up states that Spongey can go into. / Generally, most are weapons, which are given on a progressive basis. / Also, Spongey must be able to perform all of his normal motions when in these power-up states, with a few exceptions, as detailed in the design doc
- 164: Standard attack
- 165: Control / ·Pad Control Context Change / Render
- 166: Capture / Control / ·Pad Control Context Change / Render / Shoot / Control / ·Pad Control Context Change / Render
- 167: Control / ·Pad Control Context Change / Render
- 170: Gary is a simple object that once initialised, will keep moving forward, until either dying, or reaching his goal. / A simple lemmings style element / Control / ·AI / Render / ·Sprite anim
- 172: Detail to be defined / Control / ·AI / Render / Sprite anim
- 173: Detail to be defined / Control / ·AI / Render / Sprite anim
- 175: One block will be used to save games. / This block will contain multiple slots, that the user chooses from. / This save will also contain options, which will be auto loaded at game boot
- 176: ·Slot Select / ·Read Data / ·CRC Check / ·Start Game on successful load / ·Error Checking
- 177: ·Slot Select / ·Slot Delete / ·Name Entry / ·Confirm Overwrite / ·Format Card / ·Write Data / ·Icon / ·CRC Check / ·Error checking / ·
- 182: Levels are built from multiple layers / Each 'module' of a level, has its own layer
- 183: Layers that are non graphical. / Essentially, control data for the in-game elements
- 184: Layer for placement of platforms / ·GUI for setting params (To be defined) / Platform Data (To be defined) / ·X / ·Y / ·Type / ·Speed / .... / More detail to be defined after meetings with AGB and PSX programmers
- 185: Layer for placement of Pickups & Power-Ups / ·GUI for setting params (To be defined / More detail to be defined after meetings with AGB and PSX programmers
- 186: Output end platform data. / This data ideally will be as close to the final platform format as possible. / i.e. Once loaded, only absolute pointers need to be fixed up (if any)
- 187: PSX Format / Raw data. / Data is one continuous block, with headers and sub-headers setting data layout
- 189: Platform data / Header / ·Platform count / Platform Data (To be defined) / ·X / ·Y / ·Type / ·Speed / ·.... / Item data / Header / ·Item count / Item Data (To be defined) / ·X / ·Y / ·Type / ·State / ....

| ID | WBS | Task | Duration | Start | Finish | Total slack | Resources | Work |
| --- | --- | --- | --- | --- | --- | --- | --- | --- |
| 190 | 7.1.1.2.2 | **AGB Data** | 1d | 2001-02-20 | 2001-02-20 | 14d |  | 8h |
| 191 | 7.1.1.2.2.1 | **Map Data** | 1d | 2001-02-20 | 2001-02-20 | 14d |  | 8h |
| 192 | 7.1.1.2.2.1.1 | Platform Data/Item Data | 1d | 2001-02-20 | 2001-02-20 | 14d | Dave Owens | 8h |
| 193 | 7.1.2 | **Platforms** | 12d | 2001-02-21 | 2001-03-08 | 2d |  | 96h |
| 194 | 7.1.2.1 | **Types** | 7d | 2001-02-21 | 2001-03-01 | 7d |  | 56h |
| 195 | 7.1.2.1.1 | Standard | 1d | 2001-02-21 | 2001-02-21 | 13d | Dave Owens | 8h |
| 196 | 7.1.2.1.2 | Weighted | 2d | 2001-02-22 | 2001-02-23 | 11d | Dave Owens | 16h |
| 197 | 7.1.2.1.3 | Destructible | 2d | 2001-02-26 | 2001-02-27 | 9d | Dave Owens | 16h |
| 198 | 7.1.2.1.4 | See-Saw | 2d | 2001-02-28 | 2001-03-01 | 7d | Dave Owens | 16h |
| 199 | 7.1.2.2 | **Motion** | 5d | 2001-03-02 | 2001-03-08 | 2d |  | 40h |
| 200 | 7.1.2.2.1 | Static | 1d | 2001-03-02 | 2001-03-02 | 6d | Dave Owens | 8h |
| 201 | 7.1.2.2.2 | Linear Path | 2d | 2001-03-05 | 2001-03-06 | 4d | Dave Owens | 16h |
| 202 | 7.1.2.2.3 | Circular Path | 2d | 2001-03-07 | 2001-03-08 | 2d | Dave Owens | 16h |
| 203 | 7.1.3 | **Pick-ups** | 1d | 2001-03-09 | 2001-03-09 | 1d |  | 8h |
| 204 | 7.1.3.1 | Types | 1d | 2001-03-09 | 2001-03-09 | 1d | Dave Owens | 8h |
| 205 | 7.1.4 | **Power-Ups** | 1d | 2001-03-12 | 2001-03-12 | 0d |  | 8h |
| 206 | 7.1.4.1 | Types | 1d | 2001-03-12 | 2001-03-12 | 0d | Dave Owens | 8h |
| 207 | 7.2 | **Charles Balir** | 20d | 2001-02-12 | 2001-03-09 | 1d |  | 160h |
| 208 | 7.2.1 | **NPC** | 20d | 2001-02-12 | 2001-03-09 | 1d |  | 160h |
| 209 | 7.2.1.1 | **World3** | 15d | 2001-02-12 | 2001-03-02 | 6d |  | 120h |
| 210 | 7.2.1.1.1 | Enemies | 10d | 2001-02-12 | 2001-02-23 | 11d | Charles Blair | 80h |
| 211 | 7.2.1.1.2 | Boss | 5d | 2001-02-26 | 2001-03-02 | 6d | Charles Blair | 40h |
| 212 | 7.2.1.2 | **World4** | 5d | 2001-03-05 | 2001-03-09 | 1d |  | 40h |
| 213 | 7.2.1.2.1 | Enemies | 5d | 2001-03-05 | 2001-03-09 | 1d | Charles Blair | 40h |

Notes:
- 190: PSX Format / Pref Raw data, but Adrian has mentioned source code (AKK!) / Data is one continuous block, with headers and sub-headers setting data layout
- 192: Platform data / Header / ·Platform count / Platform Data (To be defined) / ·X / ·Y / ·Type / ·Speed / ·.... / Item data / Header / ·Item count / Item Data (To be defined) / ·X / ·Y / ·Type / ·State / ....
- 193: Platforms are any surface the player can stand on, which has motion of some form. / These take two main params. / Type / The actual style of the platform itself / Path / What movement the platform has, defined as paths
- 194: Type of platforms
- 195: Standard Platform / Control / ·Nothing extra / Render / ·Normal sprite render
- 196: Platform will sink when the player stands on it. / Can be applied to any other platform type :of) / Control / ·Offsets platform Y pos / Render / ·Normal sprite render
- 197: Platform will destroy itself, after an amount of time, when player is stood on it. / Can be applied to any other platform type :of) / Control / ·Timer/count for destroy / Render / ·Normal sprite render / ·Block destroying render
- 198: Platform will rotate around its centre, depending on where the player is stood on it, just like a see-saw / Can be applied to any other platform type :of) / Control / ·Player position dependant render / Render / ·Rotated sprite render
- 199: Types of motion that can be applied to a platform
- 200: Platform has no motion
- 201: Platforms path is defined by a series of points. / The platforms moves thru these points at a constant speed. / ·Point data / ·Speed / ·Trigger params (to be defined)
- 202: Platforms path is defined by a centre point, and a radius. / The platforms rotates around this point, and this radius at a constant speed. / Always staying horizontal / ·Central Point / ·Radius / ·Speed / ·Trigger params (to be defined)
- 203: The handling of pickups within the level / Control / ·Animation / Render / ·Render as sprites / Collision / ·To Player Collision
- 204: Patty Burgers / Salty Shakes / Salty Fries / Underpants / Golden Spatulas / Ammo
- 205: The handling of Power-Ups within the level. / Control / ·Animation / Render / ·Render as sprites / Collision / ·To Player Collision
- 206: Karate Chop / Net / Jelly Launcher / Coral Blower / Bubble Mixture / Balloon / Diving Helmet / Glasses / Superhero Ring / Squeaky Boots
- 210: Detail to be defined / Control / ·AI / Render / Sprite anim
- 211: Detail to be defined / Control / ·AI / Render / Sprite anim
- 213: Detail to be defined / Control / ·AI / Render / Sprite anim

| ID | WBS | Task | Duration | Start | Finish | Total slack | Deadline | Resources | Work |
| --- | --- | --- | --- | --- | --- | --- | --- | --- | --- |
| 214 | 7.3 | **Paul Grenfel** | 21d | 2001-02-12 | 2001-03-12 | 0d |  |  | 168h |
| 215 | 7.3.1 | **Front-end** | 12d | 2001-02-12 | 2001-02-27 | 9d |  |  | 96h |
| 216 | 7.3.1.1 | **Main Screen GUI** | 10d | 2001-02-12 | 2001-02-23 | 11d |  |  | 80h |
| 217 | 7.3.1.1.1 | New Game GUI | 2d | 2001-02-12 | 2001-02-13 | 19d |  | Paul Grenfell | 16h |
| 218 | 7.3.1.1.2 | Load Game GUI | 2d | 2001-02-14 | 2001-02-15 | 17d |  | Paul Grenfell | 16h |
| 219 | 7.3.1.1.3 | **Options GUI** | 6d | 2001-02-16 | 2001-02-23 | 11d |  |  | 48h |
| 220 | 7.3.1.1.3.1 | Control GUI | 2d | 2001-02-16 | 2001-02-19 | 15d |  | Paul Grenfell | 16h |
| 221 | 7.3.1.1.3.2 | Audio GUI | 2d | 2001-02-20 | 2001-02-21 | 13d |  | Paul Grenfell | 16h |
| 222 | 7.3.1.1.3.3 | Screen GUI | 2d | 2001-02-22 | 2001-02-23 | 11d |  | Paul Grenfell | 16h |
| 223 | 7.3.1.2 | Demo Loop | 2d | 2001-02-26 | 2001-02-27 | 9d |  | Paul Grenfell | 16h |
| 224 | 7.3.2 | Load (Game) | 1d | 2001-02-28 | 2001-02-28 | 8d |  | Paul Grenfell | 8h |
| 225 | 7.3.3 | **In-Game GUI** | 8d | 2001-03-01 | 2001-03-12 | 0d |  |  | 64h |
| 226 | 7.3.3.1 | Level Map | 4d | 2001-03-01 | 2001-03-06 | 4d |  | Paul Grenfell | 32h |
| 227 | 7.3.3.2 | Panel | 1d | 2001-03-07 | 2001-03-07 | 3d |  | Paul Grenfell | 8h |
| 228 | 7.3.3.3 | Pause Menu | 3d | 2001-03-08 | 2001-03-12 | 0d |  | Paul Grenfell | 24h |
| 230 | 8 | **Milestone 8 - 09/04/01** | 21d | 2001-03-12 | 2001-04-09 | 0d | 2001-04-09 |  | 448h |
| 231 | 8.1 | **Dave Owens** | 16d | 2001-03-13 | 2001-04-03 | 4d |  |  | 128h |
| 232 | 8.1.1 | **Player Character** | 16d | 2001-03-13 | 2001-04-03 | 4d |  |  | 128h |
| 233 | 8.1.1.1 | **Control** | 16d | 2001-03-13 | 2001-04-03 | 4d |  |  | 128h |
| 234 | 8.1.1.1.1 | **States** | 16d | 2001-03-13 | 2001-04-03 | 4d |  |  | 128h |
| 235 | 8.1.1.1.1.1 | **Power-Up States** | 14d | 2001-03-13 | 2001-03-30 | 6d |  |  | 112h |
| 236 | 8.1.1.1.1.1.1 | Coral Blower | 2d | 2001-03-13 | 2001-03-14 | 18d |  | Dave Owens | 16h |
| 237 | 8.1.1.1.1.1.2 | Bubble Mixture | 2d | 2001-03-15 | 2001-03-16 | 16d |  | Dave Owens | 16h |
| 238 | 8.1.1.1.1.1.3 | Balloon | 2d | 2001-03-19 | 2001-03-20 | 14d |  | Dave Owens | 16h |
| 239 | 8.1.1.1.1.1.4 | Diving Helmet | 2d | 2001-03-21 | 2001-03-22 | 12d |  | Dave Owens | 16h |
| 240 | 8.1.1.1.1.1.5 | Glasses | 2d | 2001-03-23 | 2001-03-26 | 10d |  | Dave Owens | 16h |
| 241 | 8.1.1.1.1.1.6 | Superhero Ring | 2d | 2001-03-27 | 2001-03-28 | 8d |  | Dave Owens | 16h |
| 242 | 8.1.1.1.1.1.7 | Squeaky Boots | 2d | 2001-03-29 | 2001-03-30 | 6d |  | Dave Owens | 16h |

Notes:
- 217: Select Difficulty GUI
- 218: Load GUI (Memcard)
- 220: Pad Config
- 221: Sfx Volume GUI / Music Volume GUI / Speech Volume GUI
- 222: Centre GUI
- 223: Front-End FMV/FMA / Game Screen/FMV/FMA / Nickelodeon Screen/FMV/FMA / Publisher Screen/FMV/FMA / Developer Screen/FMV/FMA / Game Demo
- 224: Background Screen / Loading indicator
- 226: Single screen which shows the level structure of the world. / From here the user is able to progress thru the levels, and save game
- 227: Health / Lives / Continue / Ammo
- 228: Activated by pressing START button / Will bring up a menu of in-game options. / Commonly / ·Resume Game / ·Options / ·Quit / ·
- 232: Sponge Bob himself
- 235: These are the various power-up states that Spongey can go into. / Generally, most are weapons, which are given on a progressive basis. / Also, Spongey must be able to perform all of his normal motions when in these power-up states, with a few exceptions, as detailed in the design doc
- 236: Capture / Control / ·Pad Control Context Change / Render / Shoot / Control / ·Pad Control Context Change / Render
- 237: Shoot / Control / ·Pad Control Context Change / Render / Bubble / Control / Render
- 238: Control / ·Pad Control Context Change / Render
- 239: Control / · / Render
- 240: Control / Render
- 241: Control / Render
- 242: Control / Render

| ID | WBS | Task | Duration | Start | Finish | Total slack | Deadline | Resources | Work |
| --- | --- | --- | --- | --- | --- | --- | --- | --- | --- |
| 243 | 8.1.1.1.1.2 | **Misc States** | 2d | 2001-04-02 | 2001-04-03 | 4d |  |  | 16h |
| 244 | 8.1.1.1.1.2.1 | Communicate | 2d | 2001-04-02 | 2001-04-03 | 4d |  | Dave Owens | 16h |
| 245 | 8.2 | **Charles Balir** | 20d | 2001-03-12 | 2001-04-06 | 1d |  |  | 160h |
| 246 | 8.2.1 | **NPC** | 20d | 2001-03-12 | 2001-04-06 | 1d |  |  | 160h |
| 247 | 8.2.1.1 | **World4** | 10d | 2001-03-12 | 2001-03-23 | 11d |  |  | 80h |
| 248 | 8.2.1.1.1 | Enemies | 5d | 2001-03-12 | 2001-03-16 | 16d |  | Charles Blair | 40h |
| 249 | 8.2.1.1.2 | Boss | 5d | 2001-03-19 | 2001-03-23 | 11d |  | Charles Blair | 40h |
| 250 | 8.2.1.2 | **World5** | 10d | 2001-03-26 | 2001-04-06 | 1d |  |  | 80h |
| 251 | 8.2.1.2.1 | Enemies | 10d | 2001-03-26 | 2001-04-06 | 1d |  | Charles Blair | 80h |
| 252 | 8.3 | **Paul Grenfel** | 20d | 2001-03-13 | 2001-04-09 | 0d |  |  | 160h |
| 253 | 8.3.1 | FMA | 20d | 2001-03-13 | 2001-04-09 | 0d |  | Paul Grenfell | 160h |
| 255 | 9 | **Milestone 9 - 07/05/01 - E3** | 24d | 2001-04-04 | 2001-05-07 | 0d | 2001-05-07 |  | 480h |
| 256 | 9.1 | **Dave Owens** | 20d | 2001-04-04 | 2001-05-01 | 4d |  |  | 160h |
| 257 | 9.1.1 | Bug Fixes & Tweaking | 20d | 2001-04-04 | 2001-05-01 | 4d |  | Dave Owens | 160h |
| 258 | 9.2 | **Charles Balir** | 20d | 2001-04-09 | 2001-05-04 | 1d |  |  | 160h |
| 259 | 9.2.1 | **NPC** | 20d | 2001-04-09 | 2001-05-04 | 1d |  |  | 160h |
| 260 | 9.2.1.1 | **World5** | 5d | 2001-04-09 | 2001-04-13 | 16d |  |  | 40h |
| 261 | 9.2.1.1.1 | Boss | 5d | 2001-04-09 | 2001-04-13 | 16d |  | Charles Blair | 40h |
| 262 | 9.2.1.2 | **World6** | 15d | 2001-04-16 | 2001-05-04 | 1d |  |  | 120h |
| 263 | 9.2.1.2.1 | Enemies | 10d | 2001-04-16 | 2001-04-27 | 6d |  | Charles Blair | 80h |
| 264 | 9.2.1.2.2 | Boss | 5d | 2001-04-30 | 2001-05-04 | 1d |  | Charles Blair | 40h |
| 265 | 9.3 | **Paul Grenfel** | 20d | 2001-04-10 | 2001-05-07 | 0d |  |  | 160h |
| 266 | 9.3.1 | Bug Fixes & Tweaking | 20d | 2001-04-10 | 2001-05-07 | 0d |  | Paul Grenfell | 160h |
| 268 | 10 | **Milestone 10 - 11/06/01 - Alpha** | 24d | 2001-05-02 | 2001-06-04 | 5d | 2001-06-11 |  | 480h |
| 269 | 10.1 | **Dave Owens** | 20d | 2001-05-02 | 2001-05-29 | 9d |  |  | 160h |
| 270 | 10.1.1 | Bug Fixes & Tweaking | 20d | 2001-05-02 | 2001-05-29 | 9d |  | Dave Owens | 160h |

Notes:
- 244: When 'talking' to other players
- 248: Detail to be defined / Control / ·AI / Render / Sprite anim
- 249: Detail to be defined / Control / ·AI / Render / Sprite anim
- 251: Detail to be defined / Control / ·AI / Render / Sprite anim
- 253: FMA Utils / ·Script language / Playback / ·Control / ·Render
- 261: Detail to be defined / Control / ·AI / Render / Sprite anim
- 263: Detail to be defined / Control / ·AI / Render / Sprite anim
- 264: Detail to be defined / Control / ·AI / Render / Sprite anim

| ID | WBS | Task | Duration | Start | Finish | Total slack | Deadline | Resources | Work |
| --- | --- | --- | --- | --- | --- | --- | --- | --- | --- |
| 271 | 10.2 | **Charles Balir** | 20d | 2001-05-07 | 2001-06-01 | 6d |  |  | 160h |
| 272 | 10.2.1 | Bug Fixes & Tweaking | 20d | 2001-05-07 | 2001-06-01 | 6d |  | Charles Blair | 160h |
| 273 | 10.3 | **Paul Grenfel** | 20d | 2001-05-08 | 2001-06-04 | 5d |  |  | 160h |
| 274 | 10.3.1 | Bug Fixes & Tweaking | 20d | 2001-05-08 | 2001-06-04 | 5d |  | Paul Grenfell | 160h |
| 276 | 11 | **Milestone 11 - 09/07/01 - Beta** | 24d | 2001-05-30 | 2001-07-02 | 5d | 2001-07-09 |  | 480h |
| 277 | 11.1 | **Dave Owens** | 20d | 2001-05-30 | 2001-06-26 | 9d |  |  | 160h |
| 278 | 11.1.1 | Bug Fixes & Tweaking | 20d | 2001-05-30 | 2001-06-26 | 9d |  | Dave Owens | 160h |
| 279 | 11.2 | **Charles Balir** | 20d | 2001-06-04 | 2001-06-29 | 6d |  |  | 160h |
| 280 | 11.2.1 | Bug Fixes & Tweaking | 20d | 2001-06-04 | 2001-06-29 | 6d |  | Charles Blair | 160h |
| 281 | 11.3 | **Paul Grenfel** | 20d | 2001-06-05 | 2001-07-02 | 5d |  |  | 160h |
| 282 | 11.3.1 | Bug Fixes & Tweaking | 20d | 2001-06-05 | 2001-07-02 | 5d |  | Paul Grenfell | 160h |
| 284 | 12 | **Milestone 12 - 08/08/01 - NTSC USA Final** | 24d | 2001-06-27 | 2001-07-30 | 7d | 2001-08-08 |  | 480h |
| 285 | 12.1 | **Dave Owens** | 20d | 2001-06-27 | 2001-07-24 | 11d |  |  | 160h |
| 286 | 12.1.1 | Bug Fixes & Tweaking | 20d | 2001-06-27 | 2001-07-24 | 11d |  | Dave Owens | 160h |
| 287 | 12.2 | **Charles Balir** | 20d | 2001-07-02 | 2001-07-27 | 8d |  |  | 160h |
| 288 | 12.2.1 | Bug Fixes & Tweaking | 20d | 2001-07-02 | 2001-07-27 | 8d |  | Charles Blair | 160h |
| 289 | 12.3 | **Paul Grenfel** | 20d | 2001-07-03 | 2001-07-30 | 7d |  |  | 160h |
| 290 | 12.3.1 | Bug Fixes & Tweaking | 20d | 2001-07-03 | 2001-07-30 | 7d |  | Paul Grenfell | 160h |
| 292 | 13 | **Milestone 13 - 27/08/01 - PAL English Final** | 10d | 2001-07-25 | 2001-08-07 | 14d | 2001-08-27 |  | 80h |
| 293 | 13.1 | **Dave Owens** | 10d | 2001-07-25 | 2001-08-07 | 14d |  |  | 80h |
| 294 | 13.1.1 | PAL Code issues | 10d | 2001-07-25 | 2001-08-07 | 14d |  | Dave Owens | 80h |
| 296 | 14 | **Milestone 14 - 10/09/01 - PAL German Final** | 10d | 2001-08-08 | 2001-08-21 | 14d | 2001-09-10 |  | 80h |
| 297 | 14.1 | **Dave Owens** | 10d | 2001-08-08 | 2001-08-21 | 14d |  |  | 80h |
| 298 | 14.1.1 | Implement localised version | 5d | 2001-08-08 | 2001-08-14 | 19d |  | Dave Owens | 40h |
| 299 | 14.1.2 | Localisation code issues | 5d | 2001-08-15 | 2001-08-21 | 14d |  | Dave Owens | 40h |

| ID | WBS | Task | Duration | Start | Finish | Total slack | Deadline | Resources | Work |
| --- | --- | --- | --- | --- | --- | --- | --- | --- | --- |
| 301 | 15 | **Milestone 15 - 24/09/01 - PAL French Final** | 10d | 2001-08-22 | 2001-09-04 | 14d | 2001-09-24 |  | 80h |
| 302 | 15.1 | **Dave Owens** | 10d | 2001-08-22 | 2001-09-04 | 14d |  |  | 80h |
| 303 | 15.1.1 | Implement localised version | 5d | 2001-08-22 | 2001-08-28 | 19d |  | Dave Owens | 40h |
| 304 | 15.1.2 | Localisation code issues | 5d | 2001-08-29 | 2001-09-04 | 14d |  | Dave Owens | 40h |
| 306 | 16 | **Milestone 16 - 10/10/01 - PAL TBD Final** | 10d | 2001-09-05 | 2001-09-18 | 16d | 2001-10-10 |  | 80h |
| 307 | 16.1 | **Dave Owens** | 10d | 2001-09-05 | 2001-09-18 | 16d |  |  | 80h |
| 308 | 16.1.1 | Implement localised version | 5d | 2001-09-05 | 2001-09-11 | 21d |  | Dave Owens | 40h |
| 309 | 16.1.2 | Localisation code issues | 5d | 2001-09-12 | 2001-09-18 | 16d |  | Dave Owens | 40h |
| 311 | 17 | **Milestone 17 - 22/10/01 - PAL TBD Final** | 10d | 2001-09-19 | 2001-10-02 | 14d | 2001-10-22 |  | 80h |
| 312 | 17.1 | **Dave Owens** | 10d | 2001-09-19 | 2001-10-02 | 14d |  |  | 80h |
| 313 | 17.1.1 | Implement localised version | 5d | 2001-09-19 | 2001-09-25 | 19d |  | Dave Owens | 40h |
| 314 | 17.1.2 | Localisation code issues | 5d | 2001-09-26 | 2001-10-02 | 14d |  | Dave Owens | 40h |
| 316 | 18 | **Milestone 18 - 15/11/01 - Archive** | 2d | 2001-10-03 | 2001-10-04 | 30d | 2001-11-15 |  | 16h |
| 317 | 18.1 | **Dave Owens** | 2d | 2001-10-03 | 2001-10-04 | 30d |  |  | 16h |
| 318 | 18.1.1 | Archive | 2d | 2001-10-03 | 2001-10-04 | 30d |  | Dave Owens | 16h |
