# Code Milestones

Schedule from MS Project, 2000-10-16 to 2001-05-15, A marks actual dates.
Climax

## Calendars

- Standard: Mon-Fri 08:00-12:00, 13:00-17:00; Sat-Sun off.

## Resources

| Resource |
| --- |
| Dave Owens |
| Charles Blair |
| Paul Grenfell |
| Art |
| Design |

## Schedule

| ID | WBS | Task | Duration | Start | Finish | Total slack | Resources | Work |
| --- | --- | --- | --- | --- | --- | --- | --- | --- |
| 1 | 1 | **Map Editor** | 71d | 2000-10-16 | 2001-01-22 | 81d |  | 568h |
| 2 | 1.1 | Core Functionality | 5d | 2000-10-16 | 2000-10-20 | 147d | Dave Owens | 40h |
| 3 | 1.2 | **Layers** | 28d | 2000-10-23 | 2000-11-29 | 119d |  | 224h |
| 4 | 1.2.1 | **Gfx Layers** | 8d | 2000-10-23 | 2000-11-01 | 139d |  | 64h |
| 5 | 1.2.1.1 | Background Layer | 2d | 2000-10-23 | 2000-10-24 | 145d | Dave Owens | 16h |
| 6 | 1.2.1.2 | Mid Layer | 2d | 2000-10-25 | 2000-10-26 | 143d | Dave Owens | 16h |
| 7 | 1.2.1.3 | Action Layer | 2d | 2000-10-27 | 2000-10-30 | 141d | Dave Owens | 16h |
| 8 | 1.2.1.4 | Fore Layer | 2d | 2000-10-31 | 2000-11-01 | 139d | Dave Owens | 16h |
| 9 | 1.2.2 | **Data Layers** | 20d | 2000-11-02 | 2000-11-29 | 119d |  | 160h |
| 10 | 1.2.2.1 | Collision Layer | 5d | 2000-11-02 | 2000-11-08 | 134d | Dave Owens | 40h |
| 11 | 1.2.2.2 | Platform Layer | 5d | 2000-11-09 | 2000-11-15 | 129d | Dave Owens | 40h |
| 12 | 1.2.2.3 | NPC Layer | 5d | 2000-11-16 | 2000-11-22 | 124d | Dave Owens | 40h |
| 13 | 1.2.2.4 | Item Layer | 5d | 2000-11-23 | 2000-11-29 | 119d | Dave Owens | 40h |
| 14 | 1.3 | **Tile Bank** | 5d | 2000-11-30 | 2000-12-06 | 114d |  | 40h |
| 15 | 1.3.1 | **Tile Set** | 5d | 2000-11-30 | 2000-12-06 | 114d |  | 40h |
| 16 | 1.3.1.1 | Core | 4d | 2000-11-30 | 2000-12-05 | 115d | Dave Owens | 32h |
| 17 | 1.3.1.2 | GUI | 1d | 2000-12-06 | 2000-12-06 | 114d | Dave Owens | 8h |
| 18 | 1.4 | **Map Data** | 2d | 2000-12-07 | 2000-12-08 | 112d |  | 16h |
| 19 | 1.4.1 | Core | 2d | 2000-12-07 | 2000-12-08 | 112d | Dave Owens | 16h |
| 20 | 1.5 | **Project** | 4d | 2000-12-11 | 2000-12-14 | 108d |  | 32h |
| 21 | 1.5.1 | Load Project | 2d | 2000-12-11 | 2000-12-12 | 110d | Dave Owens | 16h |
| 22 | 1.5.2 | Save Project | 2d | 2000-12-13 | 2000-12-14 | 108d | Dave Owens | 16h |
| 23 | 1.6 | **Output** | 13d | 2000-12-15 | 2001-01-02 | 95d |  | 104h |
| 24 | 1.6.1 | **PSX Data** | 7d | 2000-12-15 | 2000-12-25 | 101d |  | 56h |
| 25 | 1.6.1.1 | **Map Data** | 5d | 2000-12-15 | 2000-12-21 | 103d |  | 40h |
| 26 | 1.6.1.1.1 | Level Data | 1d | 2000-12-15 | 2000-12-15 | 107d | Dave Owens | 8h |
| 27 | 1.6.1.1.2 | Collision Data | 1d | 2000-12-18 | 2000-12-18 | 106d | Dave Owens | 8h |
| 28 | 1.6.1.1.3 | Platform Data | 1d | 2000-12-19 | 2000-12-19 | 105d | Dave Owens | 8h |
| 29 | 1.6.1.1.4 | NPC Data | 1d | 2000-12-20 | 2000-12-20 | 104d | Dave Owens | 8h |
| 30 | 1.6.1.1.5 | Item Data | 1d | 2000-12-21 | 2000-12-21 | 103d | Dave Owens | 8h |

Notes:
- 2: Ability to view and edit multiple maps. / Shared Layer Palette Window / ·Currently active maps layer data / ·Active Layer Selection / ·Hide/Show toggle / Shared Tile Browser Window / ·Currently active maps tile sets data / ·Drop Box to select tile set / 2d/3d Toggle / ·GUI toggle to set render for 2d (GBA) or 3d (PSX) / Grid overlay / ·Ability to show a tile grid over the maps, to aid in tile placement / ·Possibly the ability to choose the colour of the grid, in case of colour similarity from tiles to grid / View Orientation / ·Ability to alter the view angle of the 'camera' respective to platform view
- 3: Levels are built from multiple layers / Each 'module' of a level, has its own layer
- 4: Layers that are only graphical
- 5: Solid Tile layer / ·32x32 (AGB defined) / ·2d Render (AGB & PSX) / ·Show/Hide
- 6: Mid Tile layer / ·32x32 (AGB defined) / ·2d Render (AGB & PSX) / ·Show/Hide / ·
- 7: Action Tile layer / ·Unlimited size / ·2d Render (AGB) / ·3d Render (PSX) / ·Show/Hide / ·
- 8: Foreground layer, in front of Action layer and player / ·Unlimited size / ·2d Render (AGB & PSX) / ·Show/Hide
- 9: Layers that are non graphical. / Essentially, control data for the in-game elements
- 10: Layer for Collision Map / ·Uses Special Collision Tile Sets / ·2d render / More detail to be defined after meetings with AGB and PSX programmers
- 11: Layer for placement of platforms / ·GUI for setting params (To be defined) / Platform Data (To be defined) / ·X / ·Y / ·Type / ·Speed / .... / More detail to be defined after meetings with AGB and PSX programmers
- 12: Layer for placement of enemies / ·GUI for setting params (To be defined) / · / More detail to be defined after meetings with AGB and PSX programmers
- 13: Layer for placement of Pickups & Power-Ups / ·GUI for setting params (To be defined / More detail to be defined after meetings with AGB and PSX programmers
- 14: A work bank of separate tile sets.
- 15: Tileset is a set of tiles, loaded from one MAX Exported file. / To keep data consistent with the max exported files, these are not going to be saved, simply reloaded from the max export each time they are needed
- 16: Load Tileset / ·Load Tiles from Max Export / ·Process Tiles into internal format / Load Textures / ·Texture list taken from Max Export / ·Textures loaded into internal format / ·Possible use of ParkGrab or internal version / Create 3d Blocks / ·Transfer tiles into internal 3d format / Create 2d Tiles / ·Create 2d 'pre-render' of tile, from 3d data and texture / ·Render based on camera view angle / Update TileSets / ·Reload 'changed' TileSets (so tile can be updated outside max)
- 17: GUI / ·Separate Tile Browser Window / ·TileSets Selector (Drop-Box..) / ·Display Tile set for picking / ·LMB Tile picking / ·RMB Tile picking
- 19: Main Map Storage / ·Resizable / ·Save Map Data to Map Editor Format
- 20: An Ini style file, which contains all file and settings information to reload a previous work session / ·Contains paths to data, no map/tile data to be held within / ·All paths relative to the project path / Project Settings / ·Active Layer / ·Current Layer Settings / ·All GUI settings
- 21: Reload previous 'work state' / ·Load project settings / ·Load Map data / ·Load Tilebank (TileSets) from relative paths
- 22: Save current 'work state' / ·Save project settings / ·Save Map data / ·Save Tilebank (TileSets) relative paths
- 23: Output end platform data. / This data ideally will be as close to the final platform format as possible. / i.e. Once loaded, only absolute pointers need to be fixed up (if any)
- 24: PSX Format / Raw data. / Data is one continuous block, with headers and sub-headers setting data layout
- 26: Layer 'Map' data level. / One block of data per gfx layer / ·Background / ·Mid / ·Action / ·Foreground / Generic Layer Header (one per layer) / ·Width / ·Height
- 27: Collision data for the action layer / Header / ·Width (should be same as Action Layer) / ·Height (should be same as Action Layer) / Data / ·Collision 'maps' for each tile (to be decided)
- 28: Platform data / Header / ·Platform count / Platform Data (To be defined) / ·X / ·Y / ·Type / ·Speed / ·....
- 29: NPC data / Header / ·NPC count / NPC Data (To be defined) / ·X / ·Y / ·Type / ·State / ....
- 30: Item data / Header / ·Item count / Item Data (To be defined) / ·X / ·Y / ·Type / ·State / ....

| ID | WBS | Task | Duration | Start | Finish | Total slack | Resources | Work |
| --- | --- | --- | --- | --- | --- | --- | --- | --- |
| 31 | 1.6.1.2 | **Tile Data** | 2d | 2000-12-22 | 2000-12-25 | 101d |  | 16h |
| 32 | 1.6.1.2.1 | Tile Blocks | 1d | 2000-12-22 | 2000-12-22 | 102d | Dave Owens | 8h |
| 33 | 1.6.1.2.2 | Textures | 1d | 2000-12-25 | 2000-12-25 | 101d | Dave Owens | 8h |
| 34 | 1.6.2 | **AGB Data** | 6d | 2000-12-26 | 2001-01-02 | 95d |  | 48h |
| 35 | 1.6.2.1 | **Map Data** | 5d | 2000-12-26 | 2001-01-01 | 96d |  | 40h |
| 36 | 1.6.2.1.1 | Level Data | 1d | 2000-12-26 | 2000-12-26 | 100d | Dave Owens | 8h |
| 37 | 1.6.2.1.2 | Collision Data | 1d | 2000-12-27 | 2000-12-27 | 99d | Dave Owens | 8h |
| 38 | 1.6.2.1.3 | Platform Data | 1d | 2000-12-28 | 2000-12-28 | 98d | Dave Owens | 8h |
| 39 | 1.6.2.1.4 | NPC Data | 1d | 2000-12-29 | 2000-12-29 | 97d | Dave Owens | 8h |
| 40 | 1.6.2.1.5 | Item Data | 1d | 2001-01-01 | 2001-01-01 | 96d | Dave Owens | 8h |
| 41 | 1.6.2.2 | **Tile Data** | 1d | 2001-01-02 | 2001-01-02 | 95d |  | 8h |
| 42 | 1.6.2.2.1 | Textures | 1d | 2001-01-02 | 2001-01-02 | 95d | Dave Owens | 8h |
| 43 | 1.7 | **Edit Functions** | 14d | 2001-01-03 | 2001-01-22 | 81d |  | 112h |
| 44 | 1.7.1 | Paint | 2d | 2001-01-03 | 2001-01-04 | 93d | Dave Owens | 16h |
| 45 | 1.7.2 | Bounding Box Selection | 2d | 2001-01-05 | 2001-01-08 | 91d | Dave Owens | 16h |
| 46 | 1.7.3 | Copy/Cut | 2d | 2001-01-09 | 2001-01-10 | 89d | Dave Owens | 16h |
| 47 | 1.7.4 | Paste | 2d | 2001-01-11 | 2001-01-12 | 87d | Dave Owens | 16h |
| 48 | 1.7.5 | Undo/Redo | 2d | 2001-01-15 | 2001-01-16 | 85d | Dave Owens | 16h |
| 49 | 1.7.6 | Tile Mirror | 2d | 2001-01-17 | 2001-01-18 | 83d | Dave Owens | 16h |
| 50 | 1.7.7 | Eye Dropper | 2d | 2001-01-19 | 2001-01-22 | 81d | Dave Owens | 16h |
| 51 | 2 | **Project** | 152d | 2000-10-16 | 2001-05-15 | 0d |  | 2912h |
| 52 | 2.1 | **System Code** | 73d | 2000-10-16 | 2001-01-24 | 79d |  | 544h |
| 53 | 2.1.1 | Generic Pad Handler | 1d | 2000-10-16 | 2000-10-16 | 151d | Paul Grenfell | 8h |
| 54 | 2.1.2 | Memory Management | 2d | 2000-10-17 | 2000-10-18 | 149d | Paul Grenfell | 16h |
| 55 | 2.1.3 | File Handler | 2d | 2000-10-19 | 2000-10-20 | 147d | Paul Grenfell | 16h |
| 56 | 2.1.4 | Error Handler | 2d | 2000-10-23 | 2000-10-24 | 145d | Paul Grenfell | 16h |
| 57 | 2.1.5 | Sprite Engine | 2d | 2000-10-25 | 2000-10-26 | 143d | Paul Grenfell | 16h |
| 58 | 2.1.6 | Scene Handler | 2d | 2000-10-27 | 2000-10-30 | 141d | Paul Grenfell | 16h |
| 59 | 2.1.7 | Localisation Database | 5d | 2000-10-31 | 2000-11-06 | 136d | Paul Grenfell | 40h |

Notes:
- 32: PSX format 3d/2d tile blocks. / There needs to be some form of 'sharing' of connecting points between blocks, to reduce tearing. / Header / Block Count / Block Header / ·Poly Count / ·Vtx Count / Block Data / ·Poly Data / ·Vtx Data / ·Shared Point Info
- 33: PSX textures / All textures will be output in TPage format. / Either spawn into ParkGrab, or internally created
- 34: PSX Format / Pref Raw data, but Adrian has mentioned source code (AKK!) / Data is one continuous block, with headers and sub-headers setting data layout
- 36: Layer 'Map' data level. / One block of data per gfx layer / ·Background / ·Mid / ·Action / ·Foreground / Generic Layer Header (one per layer) / ·Width / ·Height
- 37: Collision data for the action layer / Header / ·Width (should be same as Action Layer) / ·Height (should be same as Action Layer) / Data / ·Collision 'maps' for each tile (to be decided)
- 38: Platform data / Header / ·Platform count / Platform Data (To be defined) / ·X / ·Y / ·Type / ·Speed / ·....
- 39: NPC data / Header / ·NPC count / NPC Data (To be defined) / ·X / ·Y / ·Type / ·State / ....
- 40: Item data / Header / ·Item count / Item Data (To be defined) / ·X / ·Y / ·Type / ·State / ....
- 42: AGB Textures / The AGB will use pre-rendered tiles. / This data will come from the 2d tile data, created on TileSets load up, with some processing / Each gfx layer / ·Build list of USED tiles / ·Create a shared 256 colour palette for the used tiles. / ·Output 256 colour tiles, in AGB format. / ·Output shared palette, in AGB format.
- 43: Functions to edit the map data
- 44: Place a tile down. (Paint) / Tile placed is dependant on the mouse button used. / ·LMB Paint / ·RMB Paint
- 45: Bounding Box selection, primarily for copy and paste functions / Create BBox / ·LMB Down - Start BBox Selection / ·LMB Drag - change Selection size / ·LMB Up - End BBox Selection / Resize BBox / ·LMB Down on BBox Edge - Start Resize (Based on selected edge) / ·LMB Drag - move Edge / ·LMB Up- End BBox Resize / ·Cursor=Resize cursor / Move BBox / ·LMB Down in BBox - Start Move / ·LMB Drag - move BBox / ·LMB Up- End BBox Move / ·Cursor=Move cursor / Misc Functions / ·Select None - Clears BBox / ·Select All - Selects Whole Map / Render BBox - To be decided... / ·Wireframe box/cube / ·Tile Frame Box/Cube / ·Shaded area / GUI Needed / ·Create BBox / ·Resize BBox / ·Move BBox / ·Select None / ·Select All
- 46: Generic buffer to copy tile data to, to allow pasting into active map, and possibly any map. / Buffer / ·Resizable generic copy buffer / GUI / ·Copy / ·Cut - copies selection, then sets selection to RMB tile, or 0
- 47: Paste Copy buffer / Paste / ·Create floating BBox / ·Copy buffer data into BBox / ·Move BBox / ·Confirm placement / ·Cancel Placement
- 48: The ability to undo, maybe redo editing actions. / Unless windows is able to handle multiple layers of Data editing, I foresee this to only be one level. / If this is the case, then the actual points of undo are yet to be decided as well, potentially only the undo buffer will be updated when an edit function is complete, i.e., mouse button up / Tasks based on hand made undo / Edit tracking / ·Store 'tile map' changes into buffer / ·Buffer resizable to allow for any amount data change / ·Store X, Y, Previous data / Undo/Redo / ·Swap data in undo buffer for map data (thus allowing redo) / ·Redo only available after an undo / ·Undo buffer obviously cleared on new edit (single buffer assumption)
- 49: Ability to mirror tile in X or Y axis (based on 2d tile principle) / GUI / ·X Mirror / ·Y Mirror / ·GUI needs to correspond with selected tiles mirror params
- 50: This function is much the same as the eye dropper in art packages. / Essentially it will pick up the tile clicked on, and assign that tile to the mouse button that clicked / GUI / ·Button (Tool Bar) / ·Keyboard Mapping / Functionality / ·Read tile data and assign to clicked button
- 53: Reading and translation on pad data / Analogue will not need to be supported / ·Read Pad Port Data / ·Translate into game pad data based on pad Config / ·
- 54: Memory allocation, de-allocation / ·Memory alloc / ·Memory De-Alloc / ·Memory Defragmentation / ·Memory Leak trapping / ·Memory Debugging functions
- 55: PC/CD loading routines / ·Load files to target / ·Streaming of data / ·Caching of Data
- 56: Handling of all errors / ·Debug messages / ·Assert Messages / ·Exception handler
- 57: ·Handle frames from VRAM / ·Rotation / ·Mirroring / ·Scaling / ·Transparency - Fake Alpha? / ·Componenting?
- 58: Handle the scene traversal of the game. / ·Init scene / ·Dump Scene / ·Auto-dump current scene, on new scene being added? / ·Scene Debugging (memory remnants/Diff)
- 59: All translation text components / ·DB loading / ·text retrieval from DB / ·Printing of text / ·Handling of printed text / ·Text to speech hooks / Excel sheet to target database tools

| ID | WBS | Task | Type | Duration | Start | Finish | Total slack | Resources | Work |
| --- | --- | --- | --- | --- | --- | --- | --- | --- | --- |
| 60 | 2.1.8 | **Audio** |  | 57d | 2000-11-07 | 2001-01-24 | 79d |  | 96h |
| 61 | 2.1.8.1 | PSX Audio Driver |  | 4d | 2000-11-07 | 2000-11-10 | 132d | Paul Grenfell | 32h |
| 62 | 2.1.8.2 | Music |  | 3d | 2000-11-13 | 2000-11-15 | 129d | Paul Grenfell | 24h |
| 63 | 2.1.8.3 | Samples |  | 3d | 2000-11-16 | 2000-11-20 | 126d | Paul Grenfell | 24h |
| 64 | 2.1.8.4 | Speech |  | 2d | 2001-01-23 | 2001-01-24 | 79d | Dave Owens | 16h |
| 65 | 2.1.9 | **Memcard** |  | 20d | 2000-11-21 | 2000-12-18 | 106d |  | 160h |
| 66 | 2.1.9.1 | Load |  | 10d | 2000-11-21 | 2000-12-04 | 116d | Paul Grenfell | 80h |
| 67 | 2.1.9.2 | Save |  | 10d | 2000-12-05 | 2000-12-18 | 106d | Paul Grenfell | 80h |
| 68 | 2.1.10 | **GUI Handler** |  | 18d | 2000-12-19 | 2001-01-11 | 88d |  | 144h |
| 69 | 2.1.10.1 | **GUI Components (Generic)** |  | 18d | 2000-12-19 | 2001-01-11 | 88d |  | 144h |
| 70 | 2.1.10.1.1 | Parent Frame |  | 2d | 2000-12-19 | 2000-12-20 | 104d | Paul Grenfell | 16h |
| 71 | 2.1.10.1.2 | Child Frame |  | 2d | 2000-12-21 | 2000-12-22 | 102d | Paul Grenfell | 16h |
| 72 | 2.1.10.1.3 | Textbox |  | 2d | 2000-12-25 | 2000-12-26 | 100d | Paul Grenfell | 16h |
| 73 | 2.1.10.1.4 | EditBox |  | 2d | 2000-12-27 | 2000-12-28 | 98d | Paul Grenfell | 16h |
| 74 | 2.1.10.1.5 | Buttons |  | 2d | 2000-12-29 | 2001-01-01 | 96d | Paul Grenfell | 16h |
| 75 | 2.1.10.1.6 | Bitmap |  | 2d | 2001-01-02 | 2001-01-03 | 94d | Paul Grenfell | 16h |
| 76 | 2.1.10.1.7 | Vertical Scroll Bar |  | 2d | 2001-01-04 | 2001-01-05 | 92d | Paul Grenfell | 16h |
| 77 | 2.1.10.1.8 | Horizontal Scroll Bar |  | 2d | 2001-01-08 | 2001-01-09 | 90d | Paul Grenfell | 16h |
| 78 | 2.1.10.1.9 | Spinner |  | 2d | 2001-01-10 | 2001-01-11 | 88d | Paul Grenfell | 16h |
| 79 | 2.1.11 | Load (Game) |  | 2d | 2001-01-12 | 2001-01-15 | 86d | Paul Grenfell | 16h |
| 80 | 2.1.12 | FMA | milestone | 0d | 2000-10-16 | 2000-10-16 | 152d | Paul Grenfell |  |
| 81 | 2.2 | **Front-end** |  | 22d | 2001-01-16 | 2001-02-14 | 64d |  | 176h |
| 82 | 2.2.1 | **Main Screen GUI** |  | 20d | 2001-01-16 | 2001-02-12 | 66d |  | 160h |
| 83 | 2.2.1.1 | New Game GUI |  | 4d | 2001-01-16 | 2001-01-19 | 82d | Paul Grenfell | 32h |
| 84 | 2.2.1.2 | Load Game GUI |  | 4d | 2001-01-22 | 2001-01-25 | 78d | Paul Grenfell | 32h |

Notes:
- 61: Utilise the PSX Mod player libraries for all sample and music playing. / All Data supplied as packed track data, and VAB banks.
- 62: Music is played as a standard tracker module / ·Load / ·Play / ·Pause / ·Stop / ·Fade In / ·Fade Out / ·Dump / ·Volume Setting / ·
- 63: Samples are played as either normal samples, or sequences of samples, defined by tracker data. / ·Load Sample Data (VAB Bank) / ·Load Sequence Data (Packed tracker module) / ·Play Sample, returns ID for external control / ·Play Sequence, returns ID for external control / ·Play Priorities / ·Pause/Resume (takes ID) / ·Stop (Takes ID) / ·Loop (Prob an attrib passed on play) / ·Reverb (Prob an attrib passed on play) / ·Dump Sample Data / ·Dump Sequence Data / ·Generic Sample Volume Setting
- 64: All speech is to be streamed from CD / Streaming code / ·Play Queue / ·Priorities / ·Play / ·Pause/Resume / ·Stop / ·Volume Setting
- 65: One block will be used to save games. / This block will contain multiple slots, that the user chooses from. / This save will also contain options, which will be auto loaded at game boot
- 66: ·Slot Select / ·Read Data / ·CRC Check / ·Start Game on successful load / ·Error Checking
- 67: ·Slot Select / ·Slot Delete / ·Name Entry / ·Confirm Overwrite / ·Format Card / ·Write Data / ·Icon / ·CRC Check / ·Error checking / ·
- 68: GUI Handler is a generic 'global' class that will maintain and control all active GUI elements. / These GUI elements are defined as data, and are built from components.
- 69: Generic Components to be used in other GUI elements. / To retain maximum coherency and data flow, these MUST be data derived components
- 70: Control / Render
- 71: Control / Render
- 72: Control / Render
- 73: Control / Render
- 74: Control / Render
- 75: Control / Render
- 76: Linking / Control / Render
- 77: Linking / Control / Render
- 78: Linking / Control / Render
- 79: Background Screen / Loading indicator
- 80: FMA Utils / ·Script language / Playback / ·Control / ·Render
- 83: Select Difficulty GUI
- 84: Load GUI (Memcard)

| ID | WBS | Task | Duration | Start | Finish | Total slack | Resources | Work |
| --- | --- | --- | --- | --- | --- | --- | --- | --- |
| 85 | 2.2.1.3 | **Options GUI** | 12d | 2001-01-26 | 2001-02-12 | 66d |  | 96h |
| 86 | 2.2.1.3.1 | Control GUI | 4d | 2001-01-26 | 2001-01-31 | 74d | Paul Grenfell | 32h |
| 87 | 2.2.1.3.2 | Audio GUI | 4d | 2001-02-01 | 2001-02-06 | 70d | Paul Grenfell | 32h |
| 88 | 2.2.1.3.3 | Screen GUI | 4d | 2001-02-07 | 2001-02-12 | 66d | Paul Grenfell | 32h |
| 89 | 2.2.2 | Demo Loop | 2d | 2001-02-13 | 2001-02-14 | 64d | Paul Grenfell | 16h |
| 90 | 2.3 | **Game** | 152d | 2000-10-16 | 2001-05-15 | 0d |  | 2072h |
| 91 | 2.3.1 | **Level** | 5d | 2001-01-25 | 2001-01-31 | 74d |  | 40h |
| 92 | 2.3.1.1 | **Layers** | 5d | 2001-01-25 | 2001-01-31 | 74d |  | 40h |
| 93 | 2.3.1.1.1 | Background Layer | 1d | 2001-01-25 | 2001-01-25 | 78d | Dave Owens | 8h |
| 94 | 2.3.1.1.2 | Mid Layer | 1d | 2001-01-26 | 2001-01-26 | 77d | Dave Owens | 8h |
| 95 | 2.3.1.1.3 | Action Layer | 2d | 2001-01-29 | 2001-01-30 | 75d | Dave Owens | 16h |
| 96 | 2.3.1.1.4 | Fore Layer | 1d | 2001-01-31 | 2001-01-31 | 74d | Dave Owens | 8h |
| 97 | 2.3.2 | **Scenery Objects** | 96d | 2000-10-16 | 2001-02-26 | 56d |  | 144h |
| 98 | 2.3.2.1 | **Platforms** | 14d | 2001-02-01 | 2001-02-20 | 60d |  | 112h |
| 99 | 2.3.2.1.1 | **Types** | 8d | 2001-02-01 | 2001-02-12 | 66d |  | 64h |
| 100 | 2.3.2.1.1.1 | Standard | 2d | 2001-02-01 | 2001-02-02 | 72d | Dave Owens | 16h |
| 101 | 2.3.2.1.1.2 | Weighted | 2d | 2001-02-05 | 2001-02-06 | 70d | Dave Owens | 16h |
| 102 | 2.3.2.1.1.3 | Destructible | 2d | 2001-02-07 | 2001-02-08 | 68d | Dave Owens | 16h |
| 103 | 2.3.2.1.1.4 | See-Saw | 2d | 2001-02-09 | 2001-02-12 | 66d | Dave Owens | 16h |
| 104 | 2.3.2.1.2 | **Motion** | 6d | 2001-02-13 | 2001-02-20 | 60d |  | 48h |
| 105 | 2.3.2.1.2.1 | Static | 2d | 2001-02-13 | 2001-02-14 | 64d | Dave Owens | 16h |
| 106 | 2.3.2.1.2.2 | Linear Path | 2d | 2001-02-15 | 2001-02-16 | 62d | Dave Owens | 16h |
| 107 | 2.3.2.1.2.3 | Circular Path | 2d | 2001-02-19 | 2001-02-20 | 60d | Dave Owens | 16h |
| 108 | 2.3.2.2 | **Pick-ups** | 2d | 2001-02-21 | 2001-02-22 | 58d |  | 16h |
| 109 | 2.3.2.2.1 | Types | 2d | 2001-02-21 | 2001-02-22 | 58d | Dave Owens | 16h |

Notes:
- 86: Pad Config
- 87: Sfx Volume GUI / Music Volume GUI / Speech Volume GUI
- 88: Centre GUI
- 89: Front-End FMV/FMA / Game Screen/FMV/FMA / Nickelodeon Screen/FMV/FMA / Publisher Screen/FMV/FMA / Developer Screen/FMV/FMA / Game Demo
- 93: Background (solid) Tile layer / Control / ·Proportional Parallax positioning, relative to the Mid Layer / Render / ·2d Render (AGB & PSX)
- 94: Mid Tile layer / Control / ·Proportional Parallax positioning, relative to the Action Layer / Render / ·2d Render (AGB & PSX)
- 95: Action Tile layer - The layer that the game is based on / Control / ·Proportional positioning, relative to the Player/Camera / Render / ·2d Render (AGB) / ·3d Render (PSX)
- 96: Foreground layer, in front of Action layer and player / Control / ·Proportional parallax positioning, relative to the Action Layer / Render / ·2d Render (AGB & PSX)
- 98: Platforms are any surface the player can stand on, which has motion of some form. / These take two main params. / Type / The actual style of the platform itself / Path / What movement the platform has, defined as paths
- 99: Type of platforms
- 100: Standard Platform / Control / ·Nothing extra / Render / ·Normal sprite render
- 101: Platform will sink when the player stands on it. / Can be applied to any other platform type :of) / Control / ·Offsets platform Y pos / Render / ·Normal sprite render
- 102: Platform will destroy itself, after an amount of time, when player is stood on it. / Can be applied to any other platform type :of) / Control / ·Timer/count for destroy / Render / ·Normal sprite render / ·Block destroying render
- 103: Platform will rotate around its centre, depending on where the player is stood on it, just like a see-saw / Can be applied to any other platform type :of) / Control / ·Player position dependant render / Render / ·Rotated sprite render
- 104: Types of motion that can be applied to a platform
- 105: Platform has no motion
- 106: Platforms path is defined by a series of points. / The platforms moves thru these points at a constant speed. / ·Point data / ·Speed / ·Trigger params (to be defined)
- 107: Platforms path is defined by a centre point, and a radius. / The platforms rotates around this point, and this radius at a constant speed. / Always staying horizontal / ·Central Point / ·Radius / ·Speed / ·Trigger params (to be defined)
- 108: The handling of pickups within the level / Control / ·Animation / Render / ·Render as sprites / Collision / ·To Player Collision
- 109: Patty Burgers / Salty Shakes / Salty Fries / Underpants / Golden Spatulas / Ammo

| ID | WBS | Task | Type | Duration | Start | Finish | Total slack | Resources | Work |
| --- | --- | --- | --- | --- | --- | --- | --- | --- | --- |
| 110 | 2.3.2.3 | **Power-Ups** |  | 2d | 2001-02-23 | 2001-02-26 | 56d |  | 16h |
| 111 | 2.3.2.3.1 | Types |  | 2d | 2001-02-23 | 2001-02-26 | 56d | Dave Owens | 16h |
| 112 | 2.3.2.4 | **Switches/Triggers** |  | 0d | 2000-10-16 | 2000-10-16 | 152d |  |  |
| 113 | 2.3.2.4.1 | Types | milestone | 0d | 2000-10-16 | 2000-10-16 | 152d | Dave Owens |  |
| 114 | 2.3.3 | **Collision** |  | 0d | 2000-10-16 | 2000-10-16 | 152d |  |  |
| 115 | 2.3.3.1 | Actor 2 Actor | milestone | 0d | 2000-10-16 | 2000-10-16 | 152d | Dave Owens |  |
| 116 | 2.3.3.2 | Actor 2 level | milestone | 0d | 2000-10-16 | 2000-10-16 | 152d | Dave Owens |  |
| 117 | 2.3.4 | **In-Game GUI** |  | 10d | 2001-02-15 | 2001-02-28 | 54d |  | 80h |
| 118 | 2.3.4.1 | Level Map |  | 4d | 2001-02-15 | 2001-02-20 | 60d | Paul Grenfell | 32h |
| 119 | 2.3.4.2 | Panel |  | 2d | 2001-02-21 | 2001-02-22 | 58d | Paul Grenfell | 16h |
| 120 | 2.3.4.3 | Pause Menu |  | 4d | 2001-02-23 | 2001-02-28 | 54d | Paul Grenfell | 32h |
| 121 | 2.3.5 | **Player Character** |  | 56d | 2001-02-27 | 2001-05-15 | 0d |  | 488h |
| 122 | 2.3.5.1 | **Control** |  | 42d | 2001-02-27 | 2001-04-25 | 14d |  | 336h |
| 123 | 2.3.5.1.1 | **States** |  | 42d | 2001-02-27 | 2001-04-25 | 14d |  | 336h |
| 124 | 2.3.5.1.1.1 | **Normal States** |  | 16d | 2001-02-27 | 2001-03-20 | 40d |  | 128h |
| 125 | 2.3.5.1.1.1.1 | Idle |  | 2d | 2001-02-27 | 2001-02-28 | 54d | Dave Owens | 16h |
| 126 | 2.3.5.1.1.1.2 | Walk |  | 2d | 2001-03-01 | 2001-03-02 | 52d | Dave Owens | 16h |
| 127 | 2.3.5.1.1.1.3 | Run |  | 2d | 2001-03-05 | 2001-03-06 | 50d | Dave Owens | 16h |
| 128 | 2.3.5.1.1.1.4 | Jump |  | 2d | 2001-03-07 | 2001-03-08 | 48d | Dave Owens | 16h |
| 129 | 2.3.5.1.1.1.5 | Fall/Land |  | 2d | 2001-03-09 | 2001-03-12 | 46d | Dave Owens | 16h |
| 130 | 2.3.5.1.1.1.6 | Duck |  | 2d | 2001-03-13 | 2001-03-14 | 44d | Dave Owens | 16h |
| 131 | 2.3.5.1.1.1.7 | Teeter |  | 2d | 2001-03-15 | 2001-03-16 | 42d | Dave Owens | 16h |
| 132 | 2.3.5.1.1.1.8 | Misc |  | 2d | 2001-03-19 | 2001-03-20 | 40d | Dave Owens | 16h |
| 133 | 2.3.5.1.1.2 | **Power-Up States** |  | 24d | 2001-03-21 | 2001-04-23 | 16d |  | 192h |
| 134 | 2.3.5.1.1.2.1 | Normal |  | 2d | 2001-03-21 | 2001-03-22 | 38d | Dave Owens | 16h |
| 135 | 2.3.5.1.1.2.2 | Butt Bounce |  | 2d | 2001-03-23 | 2001-03-26 | 36d | Dave Owens | 16h |
| 136 | 2.3.5.1.1.2.3 | Karate Chop |  | 2d | 2001-03-27 | 2001-03-28 | 34d | Dave Owens | 16h |
| 137 | 2.3.5.1.1.2.4 | Net |  | 2d | 2001-03-29 | 2001-03-30 | 32d | Dave Owens | 16h |
| 138 | 2.3.5.1.1.2.5 | Launcher |  | 2d | 2001-04-02 | 2001-04-03 | 30d | Dave Owens | 16h |
| 139 | 2.3.5.1.1.2.6 | Coral Blower |  | 2d | 2001-04-04 | 2001-04-05 | 28d | Dave Owens | 16h |
| 140 | 2.3.5.1.1.2.7 | Bubble Mixture |  | 2d | 2001-04-06 | 2001-04-09 | 26d | Dave Owens | 16h |
| 141 | 2.3.5.1.1.2.8 | Balloon |  | 2d | 2001-04-10 | 2001-04-11 | 24d | Dave Owens | 16h |
| 142 | 2.3.5.1.1.2.9 | Diving Helmet |  | 2d | 2001-04-12 | 2001-04-13 | 22d | Dave Owens | 16h |
| 143 | 2.3.5.1.1.2.10 | Glasses |  | 2d | 2001-04-16 | 2001-04-17 | 20d | Dave Owens | 16h |
| 144 | 2.3.5.1.1.2.11 | Superhero Ring |  | 2d | 2001-04-18 | 2001-04-19 | 18d | Dave Owens | 16h |
| 145 | 2.3.5.1.1.2.12 | Squeaky Boots |  | 2d | 2001-04-20 | 2001-04-23 | 16d | Dave Owens | 16h |

Notes:
- 110: The handling of Power-Ups within the level. / Control / ·Animation / Render / ·Render as sprites / Collision / ·To Player Collision
- 111: Karate Chop / Net / Jelly Launcher / Coral Blower / Bubble Mixture / Balloon / Diving Helmet / Glasses / Superhero Ring / Squeaky Boots
- 112: Unfortunately, to be designed, due to lack of current design on this subject :oP
- 115: BBox collision
- 116: Tile map collision
- 118: Single screen which shows the level structure of the world. / From here the user is able to progress thru the levels, and save game
- 119: Health / Lives / Continue / Ammo
- 120: Activated by pressing START button / Will bring up a menu of in-game options. / Commonly / ·Resume Game / ·Options / ·Quit / ·
- 121: Sponge Bob himself
- 124: Normal states that Spongey can be in
- 125: IdleGeneric01 / IdleGeneric02 / IdleGeneric03 / IdleGeneric04 / IdleGeneric05 / IdleGeneric06 / IdleNet / IdleLauncher / IdleCoral / IdleBoots / Wakeup / Float
- 126: Walking is used JUST for the coral Blower, cos its heavy. / No jumping is possible / Walk Start - Pos not needed / Walk Loop / Walk Stop - Pos not needed / Walk Turn
- 127: RunStart *Pos Not Needed / RunLoop / RunStop *Pos Not Needed / RunTurn
- 128: JumpStart *Pos Not Needed / JumpLoop / JumpEnd *Pos Not Needed / JumpTurn
- 129: FallLoop / HitGround01 / HitGround02 / HitGround03
- 130: DuckDown / DuckLoop / DuckUp
- 131: For when stood right on edge / TeeterFront / TeeterBack
- 132: Hover / Rebound *Pos Use Jump Frames / KnockBack *Pos Use Jump Frames / Knockforward *Pos Use Jump Frames
- 133: These are the various power-up states that Spongey can go into. / Generally, most are weapons, which are given on a progressive basis. / Also, Spongey must be able to perform all of his normal motions when in these power-up states, with a few exceptions, as detailed in the design doc
- 134: Control / Render
- 135: Standard attack
- 136: Control / ·Pad Control Context Change / Render
- 137: Capture / Control / ·Pad Control Context Change / Render / Shoot / Control / ·Pad Control Context Change / Render
- 138: Control / ·Pad Control Context Change / Render
- 139: Capture / Control / ·Pad Control Context Change / Render / Shoot / Control / ·Pad Control Context Change / Render
- 140: Shoot / Control / ·Pad Control Context Change / Render / Bubble / Control / Render
- 141: Control / ·Pad Control Context Change / Render
- 142: Control / · / Render
- 143: Control / Render
- 144: Control / Render
- 145: Control / Render

| ID | WBS | Task | Duration | Start | Finish | Total slack | Resources | Work |
| --- | --- | --- | --- | --- | --- | --- | --- | --- |
| 146 | 2.3.5.1.1.3 | **Misc States** | 2d | 2001-04-24 | 2001-04-25 | 14d |  | 16h |
| 147 | 2.3.5.1.1.3.1 | Communicate | 2d | 2001-04-24 | 2001-04-25 | 14d | Dave Owens | 16h |
| 148 | 2.3.5.2 | **Animation** | 14d | 2001-04-26 | 2001-05-15 | 0d |  | 112h |
| 149 | 2.3.5.2.1 | **Bone Animation System** | 4d | 2001-04-26 | 2001-05-01 | 10d |  | 32h |
| 150 | 2.3.5.2.1.1 | Interpolation of Animation | 2d | 2001-04-26 | 2001-04-27 | 12d | Dave Owens | 16h |
| 151 | 2.3.5.2.1.2 | Anim DB | 2d | 2001-04-30 | 2001-05-01 | 10d | Dave Owens | 16h |
| 152 | 2.3.5.2.2 | **Componented animation** | 10d | 2001-05-02 | 2001-05-15 | 0d |  | 80h |
| 153 | 2.3.5.2.2.1 | Head | 5d | 2001-05-02 | 2001-05-08 | 5d | Dave Owens | 40h |
| 154 | 2.3.5.2.2.2 | Body | 1d | 2001-05-09 | 2001-05-09 | 4d | Dave Owens | 8h |
| 155 | 2.3.5.2.2.3 | Arms | 1d | 2001-05-10 | 2001-05-10 | 3d | Dave Owens | 8h |
| 156 | 2.3.5.2.2.4 | Hands | 1d | 2001-05-11 | 2001-05-11 | 2d | Dave Owens | 8h |
| 157 | 2.3.5.2.2.5 | Legs | 1d | 2001-05-14 | 2001-05-14 | 1d | Dave Owens | 8h |
| 158 | 2.3.5.2.2.6 | Feet | 1d | 2001-05-15 | 2001-05-15 | 0d | Dave Owens | 8h |
| 159 | 2.3.5.3 | **Facial Expressions** | 5d | 2001-03-01 | 2001-03-07 | 49d |  | 40h |
| 160 | 2.3.5.3.1 | Features | 5d | 2001-03-01 | 2001-03-07 | 49d | Paul Grenfell | 40h |
| 161 | 2.3.6 | **Communication** | 20d | 2001-03-08 | 2001-04-04 | 29d |  | 160h |
| 162 | 2.3.6.1 | Script system | 5d | 2001-03-08 | 2001-03-14 | 44d | Paul Grenfell | 40h |
| 163 | 2.3.6.2 | Text to speech hooks | 5d | 2001-03-15 | 2001-03-21 | 39d | Paul Grenfell | 40h |
| 164 | 2.3.6.3 | Question / response | 5d | 2001-03-22 | 2001-03-28 | 34d | Paul Grenfell | 40h |
| 165 | 2.3.6.4 | Give item | 5d | 2001-03-29 | 2001-04-04 | 29d | Paul Grenfell | 40h |
| 166 | 2.3.7 | **NPC** | 145d | 2000-10-16 | 2001-05-04 | 7d |  | 1160h |
| 167 | 2.3.7.1 | **Friends** | 25d | 2000-10-16 | 2000-11-17 | 127d |  | 200h |
| 168 | 2.3.7.1.1 | Patrick Starfish | 4d | 2000-10-16 | 2000-10-19 | 148d | Charles Blair | 32h |
| 169 | 2.3.7.1.2 | Squidward | 4d | 2000-10-20 | 2000-10-25 | 144d | Charles Blair | 32h |
| 170 | 2.3.7.1.3 | Sandy | 4d | 2000-10-26 | 2000-10-31 | 140d | Charles Blair | 32h |
| 171 | 2.3.7.1.4 | Mr Krabs | 4d | 2000-11-01 | 2000-11-06 | 136d | Charles Blair | 32h |
| 172 | 2.3.7.1.5 | Plankton | 4d | 2000-11-07 | 2000-11-10 | 132d | Charles Blair | 32h |
| 173 | 2.3.7.1.6 | Gary | 5d | 2000-11-13 | 2000-11-17 | 127d | Charles Blair | 40h |

Notes:
- 147: When 'talking' to other players
- 148: Player character animation
- 149: Animation based on bone animation. / All data stored as quaternions. / Tests to be carried out on the resolution of the storage. / Key Framed / ·Very small data set / ·Interpolation needed - maths intensive / ·Can cause jerky animation / · / Snap-Show / ·Larger data set / ·No interpolation is needed / ·Easy to maintain and animate / We 'may' implement a dual system, where more used anims are snapshot, to make the animations look, and feel nicer
- 150: Snap-Shot or / Key Framing
- 152: To keep the data flow to an absolute minimum, we are going to utilise a componented animation system. / This involves breaking Spongey into logical sections. / As he has very thin arms, this aids in the split. / Splits will be / ·Head (Large sponge part) / ·Body (Shorts) / ·Arms / ·Hands / ·Legs / ·Feet / One benefit of this system, is that we have the opportunity to only store 'half' of the limb anims, as we can reuse the anim for the opposing side. / This is yet to be looked into
- 153: This will segmented mesh, which is deformed in real-time, to data exported from MAX. / This mesh will have connection points (Dummies) for various parts of his body / ·Arms. / ·Facial features (if taken beyond a simple flat texture) / ·Bolt-ons (Power-Ups) / Control / Render / ·Multi-poly Functionality / ·Texturing / ·Lighting / ·Shading
- 154: This will Predefined mesh. / This mesh will have connection points (Dummies) for various parts of his body / ·Legs. / ·Bolt-ons / Control / Render / ·Multi-poly Functionality / ·Texturing / ·Lighting / ·Shading
- 155: The shoulder joint will take a point on the 'Head' as its parent / The hand joint will act as the parent for the hands / ·Shoulder Joint / ·Elbow Joint / ·Hand Joint / Control / Render / ·3 point Line/Quad render / ·Texturing / ·Lighting / ·Shading
- 156: Hands will be attached to the hand joint of the arms, and take it as its parent. / Additional animation 'is' possible on the hands, but no anticipated / Control / Render / ·Multi-poly Functionality / ·Texturing / ·Lighting / ·Shading
- 157: The Hip joint will take a point on the 'Body as its parent / The foot joint will act as the parent for the feet / ·Hip Joint / ·Knee Joint / ·Foot Joint / Control / Render / ·3 point Line/Quad render / ·Texturing / ·Lighting / ·Shading
- 158: Feet will be attached to the foot joint of the legs, and take it as its parent. / Additional animation 'is' possible on the feet, but no anticipated / Control / Render / ·Multi-poly Functionality / ·Texturing / ·Lighting / ·Shading
- 160: Features available to be animated are / ·Eyebrows / ·Eyes / ·Nose / ·Mouth / The data will be animation frames stored in main memory. / Control / ·'Tweening' between frames / Render / ·The render will be an upload of individual textures to VRAM. / ·The location of this upload will overwrite a default placement of a texture allocated to the facial feature
- 162: An external util, that allows scripts to be created. / A script will basically be a sequence of text ID's, and corresponding char to attach text to
- 163: This is a system for PSX / When text is retrieved from the text DB, there is some form of extra data, that tells the code to play some speech corresponding to that text. / With this, we can use the same data, for both platforms, but introduce speech on the PSX in a simple but useful form
- 164: The raw conversation between Spongey and the NPC
- 165: When an NPC gives an item to Spongey, based on the conversation they are having
- 167: Characters that aid progress and are not harmful.
- 168: Control / ·AI / ·Communication with player / Render / ·Sprite anim
- 169: Control / ·AI / ·Communication with player / Render / ·Sprite anim
- 170: Control / ·AI / ·Communication with player / Render / ·Sprite anim
- 171: Control / ·AI / ·Communication with player / Render / ·Sprite anim
- 172: Control / ·AI / ·Communication with player / Render / ·Sprite anim
- 173: Gary is a simple object that once initialised, will keep moving forward, until either dying, or reaching his goal. / A simple lemmings style element / Control / ·AI / Render / ·Sprite anim

| ID | WBS | Task | Duration | Start | Finish | Complete | Total slack | Resources | Work |
| --- | --- | --- | --- | --- | --- | --- | --- | --- | --- |
| 174 | 2.3.7.2 | **Enemies** | 90d | 2000-11-20 | 2001-03-23 |  | 37d |  | 720h |
| 175 | 2.3.7.2.1 | World 1 | 15d | 2000-11-20 | 2000-12-08 |  | 112d | Charles Blair | 120h |
| 176 | 2.3.7.2.2 | World 2 | 15d | 2000-12-11 | 2000-12-29 |  | 97d | Charles Blair | 120h |
| 177 | 2.3.7.2.3 | World 3 | 15d | 2001-01-01 | 2001-01-19 |  | 82d | Charles Blair | 120h |
| 178 | 2.3.7.2.4 | World 4 | 15d | 2001-01-22 | 2001-02-09 |  | 67d | Charles Blair | 120h |
| 179 | 2.3.7.2.5 | World 5 | 15d | 2001-02-12 | 2001-03-02 |  | 52d | Charles Blair | 120h |
| 180 | 2.3.7.2.6 | World 6 | 15d | 2001-03-05 | 2001-03-23 |  | 37d | Charles Blair | 120h |
| 181 | 2.3.7.3 | **Bosses** | 30d | 2001-03-26 | 2001-05-04 |  | 7d |  | 240h |
| 182 | 2.3.7.3.1 | World 1 | 5d | 2001-03-26 | 2001-03-30 |  | 32d | Charles Blair | 40h |
| 183 | 2.3.7.3.2 | World 2 | 5d | 2001-04-02 | 2001-04-06 |  | 27d | Charles Blair | 40h |
| 184 | 2.3.7.3.3 | World 3 | 5d | 2001-04-09 | 2001-04-13 |  | 22d | Charles Blair | 40h |
| 185 | 2.3.7.3.4 | World 4 | 5d | 2001-04-16 | 2001-04-20 |  | 17d | Charles Blair | 40h |
| 186 | 2.3.7.3.5 | World 5 | 5d | 2001-04-23 | 2001-04-27 |  | 12d | Charles Blair | 40h |
| 187 | 2.3.7.3.6 | World 6 | 5d | 2001-04-30 | 2001-05-04 |  | 7d | Charles Blair | 40h |
| 188 | 2.4 | Back-End | 5d | 2001-04-05 | 2001-04-11 |  | 24d | Paul Grenfell | 40h |
| 189 | 2.5 | **Special Effects** | 10d | 2001-04-12 | 2001-04-25 |  | 14d |  | 80h |
| 190 | 2.5.1 | **Particles** | 5d | 2001-04-12 | 2001-04-18 |  | 19d |  | 40h |
| 191 | 2.5.1.1 | Bubbles | 5d | 2001-04-12 | 2001-04-18 |  | 19d | Paul Grenfell | 40h |
| 192 | 2.5.2 | **Other Effects** | 5d | 2001-04-19 | 2001-04-25 |  | 14d |  | 40h |
| 193 | 2.5.2.1 | Bubble Fade | 5d | 2001-04-19 | 2001-04-25 |  | 14d | Paul Grenfell | 40h |
| 195 | 3 | **MY Anim list, put here for my ref, not explicit for the prg sched** | 1d? | 2000-10-16 A | 2000-10-16 A | 100% |  |  |  |
| 196 | 3.1 | **Idle** | 1d? | 2000-10-16 A | 2000-10-16 A | 100% |  |  |  |
| 197 | 3.1.1 | IdleGeneric01 | 1d? | 2000-10-16 A | 2000-10-16 A | 100% |  |  |  |
| 198 | 3.1.2 | IdleGeneric02 | 1d? | 2000-10-16 A | 2000-10-16 A | 100% |  |  |  |
| 199 | 3.1.3 | IdleGeneric03 | 1d? | 2000-10-16 A | 2000-10-16 A | 100% |  |  |  |
| 200 | 3.1.4 | IdleGeneric04 | 1d? | 2000-10-16 A | 2000-10-16 A | 100% |  |  |  |
| 201 | 3.1.5 | IdleGeneric05 | 1d? | 2000-10-16 A | 2000-10-16 A | 100% |  |  |  |
| 202 | 3.1.6 | IdleGeneric06 | 1d? | 2000-10-16 A | 2000-10-16 A | 100% |  |  |  |
| 203 | 3.1.7 | IdleNet | 1d? | 2000-10-16 A | 2000-10-16 A | 100% |  |  |  |
| 204 | 3.1.8 | IdleLauncher | 1d? | 2000-10-16 A | 2000-10-16 A | 100% |  |  |  |
| 205 | 3.1.9 | IdleCoral | 1d? | 2000-10-16 A | 2000-10-16 A | 100% |  |  |  |
| 206 | 3.1.10 | IdleBoots | 1d? | 2000-10-16 A | 2000-10-16 A | 100% |  |  |  |
| 207 | 3.1.11 | Float | 1d? | 2000-10-16 A | 2000-10-16 A | 100% |  |  |  |

Notes:
- 174: Characters that are harmful.
- 175: Detail to be defined / Control / ·AI / Render / ·Sprite anim
- 176: Detail to be defined / Control / ·AI / Render / ·Sprite anim
- 177: Detail to be defined / Control / ·AI / Render / ·Sprite anim
- 178: Detail to be defined / Control / ·AI / Render / ·Sprite anim
- 179: Detail to be defined / Control / ·AI / Render / ·Sprite anim
- 180: Detail to be defined / Control / ·AI / Render / ·Sprite anim
- 181: Characters that are harmful, and feature at the end of each world
- 182: Detail to be defined / Control / ·AI / Render / ·Sprite anim
- 183: Detail to be defined / Control / ·AI / Render / ·Sprite anim
- 184: Detail to be defined / Control / ·AI / Render / ·Sprite anim
- 185: Detail to be defined / Control / ·AI / Render / ·Sprite anim
- 186: Detail to be defined / Control / ·AI / Render / ·Sprite anim
- 187: Detail to be defined / Control / ·AI / Render / ·Sprite anim
- 188: Game Complete / ·Congratulations sequence / Game Over / ·End of game sequence
- 190: Generic particle engine, driven by data passed to it
- 191: Control / Render
- 193: Fade In / Control / Render / Fade Out / Control / Render

| ID | WBS | Task | Duration | Start | Finish | Complete |
| --- | --- | --- | --- | --- | --- | --- |
| 208 | 3.2 | **Movement** | 1d? | 2000-10-16 A | 2000-10-16 A | 100% |
| 209 | 3.2.1 | **Walk** | 1d? | 2000-10-16 A | 2000-10-16 A | 100% |
| 210 | 3.2.1.1 | WalkStart * | 1d? | 2000-10-16 A | 2000-10-16 A | 100% |
| 211 | 3.2.1.2 | WalkLoop | 1d? | 2000-10-16 A | 2000-10-16 A | 100% |
| 212 | 3.2.1.3 | WalkEnd * | 1d? | 2000-10-16 A | 2000-10-16 A | 100% |
| 213 | 3.2.1.4 | WalkTurn | 1d? | 2000-10-16 A | 2000-10-16 A | 100% |
| 214 | 3.2.2 | **Run** | 1d? | 2000-10-16 A | 2000-10-16 A | 100% |
| 215 | 3.2.2.1 | RunStart * | 1d? | 2000-10-16 A | 2000-10-16 A | 100% |
| 216 | 3.2.2.2 | RunLoop | 1d? | 2000-10-16 A | 2000-10-16 A | 100% |
| 217 | 3.2.2.3 | RunStop * | 1d? | 2000-10-16 A | 2000-10-16 A | 100% |
| 218 | 3.2.2.4 | RunTurn | 1d? | 2000-10-16 A | 2000-10-16 A | 100% |
| 219 | 3.2.3 | **Jump** | 1d? | 2000-10-16 A | 2000-10-16 A | 100% |
| 220 | 3.2.3.1 | JumpStart * | 1d? | 2000-10-16 A | 2000-10-16 A | 100% |
| 221 | 3.2.3.2 | JumpLoop | 1d? | 2000-10-16 A | 2000-10-16 A | 100% |
| 222 | 3.2.3.3 | JumpEnd * | 1d? | 2000-10-16 A | 2000-10-16 A | 100% |
| 223 | 3.2.3.4 | JumpTurn | 1d? | 2000-10-16 A | 2000-10-16 A | 100% |
| 224 | 3.2.4 | **Fall** | 1d? | 2000-10-16 A | 2000-10-16 A | 100% |
| 225 | 3.2.4.1 | FallLoop | 1d? | 2000-10-16 A | 2000-10-16 A | 100% |
| 226 | 3.2.4.2 | HitGround01 | 1d? | 2000-10-16 A | 2000-10-16 A | 100% |
| 227 | 3.2.4.3 | HitGround02 | 1d? | 2000-10-16 A | 2000-10-16 A | 100% |
| 228 | 3.2.4.4 | HitGround03 | 1d? | 2000-10-16 A | 2000-10-16 A | 100% |
| 229 | 3.2.5 | **Duck** | 1d? | 2000-10-16 A | 2000-10-16 A | 100% |
| 230 | 3.2.5.1 | DuckDown | 1d? | 2000-10-16 A | 2000-10-16 A | 100% |
| 231 | 3.2.5.2 | DuckLoop | 1d? | 2000-10-16 A | 2000-10-16 A | 100% |
| 232 | 3.2.5.3 | DuckUp | 1d? | 2000-10-16 A | 2000-10-16 A | 100% |

| ID | WBS | Task | Duration | Start | Finish | Complete |
| --- | --- | --- | --- | --- | --- | --- |
| 233 | 3.2.6 | **Teeter** | 1d? | 2000-10-16 A | 2000-10-16 A | 100% |
| 234 | 3.2.6.1 | TeeterFront | 1d? | 2000-10-16 A | 2000-10-16 A | 100% |
| 235 | 3.2.6.2 | TeeterBack | 1d? | 2000-10-16 A | 2000-10-16 A | 100% |
| 236 | 3.2.7 | **Misc** | 1d? | 2000-10-16 A | 2000-10-16 A | 100% |
| 237 | 3.2.7.1 | Look Up (Map Scroll) | 1d? | 2000-10-16 A | 2000-10-16 A | 100% |
| 238 | 3.2.7.2 | Hover | 1d? | 2000-10-16 A | 2000-10-16 A | 100% |
| 239 | 3.2.7.3 | Rebound * | 1d? | 2000-10-16 A | 2000-10-16 A | 100% |
| 240 | 3.2.7.4 | KnockBack * | 1d? | 2000-10-16 A | 2000-10-16 A | 100% |
| 241 | 3.2.7.5 | Knockforward * | 1d? | 2000-10-16 A | 2000-10-16 A | 100% |
| 242 | 3.3 | **Death/Damage** | 1d? | 2000-10-16 A | 2000-10-16 A | 100% |
| 243 | 3.3.1 | DeathGeneric | 1d? | 2000-10-16 A | 2000-10-16 A | 100% |
| 244 | 3.3.2 | DeathSquash | 1d? | 2000-10-16 A | 2000-10-16 A | 100% |
| 245 | 3.3.3 | DeathElectric | 1d? | 2000-10-16 A | 2000-10-16 A | 100% |
| 246 | 3.3.4 | DeathZap | 1d? | 2000-10-16 A | 2000-10-16 A | 100% |
| 247 | 3.3.5 | DeathTar | 1d? | 2000-10-16 A | 2000-10-16 A | 100% |
| 248 | 3.3.6 | DeathDry | 1d? | 2000-10-16 A | 2000-10-16 A | 100% |
| 249 | 3.3.7 | DeathFall | 1d? | 2000-10-16 A | 2000-10-16 A | 100% |
| 250 | 3.3.8 | ElectricShock | 1d? | 2000-10-16 A | 2000-10-16 A | 100% |
| 251 | 3.4 | **Attacks** | 1d? | 2000-10-16 A | 2000-10-16 A | 100% |
| 252 | 3.4.1 | ButtBounce | 1d? | 2000-10-16 A | 2000-10-16 A | 100% |
| 253 | 3.4.2 | Karate | 1d? | 2000-10-16 A | 2000-10-16 A | 100% |
| 254 | 3.4.3 | FireAim | 1d? | 2000-10-16 A | 2000-10-16 A | 100% |
| 255 | 3.4.4 | FireRecoil | 1d? | 2000-10-16 A | 2000-10-16 A | 100% |
| 256 | 3.4.5 | NetSwipe | 1d? | 2000-10-16 A | 2000-10-16 A | 100% |
| 257 | 3.4.6 | NetSwipeJump | 1d? | 2000-10-16 A | 2000-10-16 A | 100% |
| 258 | 3.4.7 | NetShoot | 1d? | 2000-10-16 A | 2000-10-16 A | 100% |
| 259 | 3.4.8 | NetShootJump | 1d? | 2000-10-16 A | 2000-10-16 A | 100% |
| 260 | 3.4.9 | Whirlwind | 1d? | 2000-10-16 A | 2000-10-16 A | 100% |

| ID | WBS | Task | Duration | Start | Finish | Complete |
| --- | --- | --- | --- | --- | --- | --- |
| 261 | 3.5 | **Misc** | 1d? | 2000-10-16 A | 2000-10-16 A | 100% |
| 262 | 3.5.1 | Wakeup | 1d? | 2000-10-16 A | 2000-10-16 A | 100% |
| 263 | 3.5.2 | Talk | 1d? | 2000-10-16 A | 2000-10-16 A | 100% |
